# Assignment2-Kaea-Cola_ProjectPlan-Draft3Final

Schedule from MS Project, 2019-01-07 to 2021-07-28, costs in $.

## Calendars

- Standard: Mon-Fri 08:00-12:00, 13:00-17:00; Sat-Sun off.

## Resources

| Resource | Group | Rate | Cost per use |
| --- | --- | --- | --- |
| Business Analyst 1 | Analysts | 154.4 |  |
| Business Analyst 2 | Analysts | 154.4 |  |
| System Analyst | Analysts | 166.5 |  |
| Project Manager | Project Managers | 222.3 |  |
| Documentation Specialist | Documentation Specialists | 132.77 |  |
| Consultant Requirements Analyst | Consultants; Analysts | 151.7 | 606.8 |
| Consultant Network Specialist | Consultants | 138 | 552 |
| Database Administrator | Database Analysts | 44.79 |  |
| Software Test Engineer |  | 44.98 |  |
| Software Tester 1 | Software Testing | 33.6 |  |
| Programmer 1 |  | 163.38 |  |
| Programmer 2 |  | 163.38 |  |
| UI Designer 1 | Designer | 148.88 |  |
| Database Analyst 1 | Database Analysts | 144.8 |  |

## Schedule

| ID | WBS | Task | Duration | Start | Finish | Predecessors | Total slack | Resources | Work | Cost |
| --- | --- | --- | --- | --- | --- | --- | --- | --- | --- | --- |
| 1 | 1 | **Pre-Development Activities** | 44d | 2019-01-07 | 2019-03-07 |  | 0d |  | 1304h | 226,389.68 |
| 2 | 1.1 | Project Planning Kickoff | 1d | 2019-01-07 | 2019-01-07 |  | 0d | Business Analyst 1; Business Analyst 2; Consultant Requirements Analyst; Project Manager; System Analyst; Documentation Specialist | 48h | 8,463.36 |
| 3 | 1.2 | **Perform Business Analysis** | 7d | 2019-01-08 | 2019-01-16 |  | 0d |  | 256h | 44,289.68 |
| 4 | 1.2.1 | Business Analysis Group 1 Observation and Meetings | 2d | 2019-01-08 | 2019-01-09 | 2 | 1d | Business Analyst 1 | 16h | 2,470.4 |
| 5 | 1.2.2 | Business Analysis Group 2 Observation and Meetings | 2d | 2019-01-08 | 2019-01-09 | 2 | 1d | Business Analyst 2 | 16h | 2,470.4 |
| 6 | 1.2.3 | Business Analysis Group 3 Observation and Meetings | 2d | 2019-01-08 | 2019-01-09 | 2 | 3d | Consultant Requirements Analyst | 16h | 3,034 |
| 7 | 1.2.4 | Business Analysis Group 4 Observation and Meetings | 2d | 2019-01-08 | 2019-01-09 | 2 | 3d | Project Manager | 16h | 3,556.8 |
| 8 | 1.2.5 | Business Analysis Group 5 Observation and Meetings | 2d | 2019-01-11 | 2019-01-14 | 2 | 0d | Consultant Requirements Analyst | 16h | 3,034 |
| 9 | 1.2.6 | Business Analysis Checkin Meeting | 1d | 2019-01-10 | 2019-01-10 | 2FS+2d | 0d | Business Analyst 1; Business Analyst 2; Consultant Requirements Analyst; Project Manager; System Analyst; Documentation Specialist | 48h | 8,463.36 |
| 10 | 1.2.7 | Business Analysis Group 1 Pt2 Observation and Meetings | 2d | 2019-01-11 | 2019-01-14 | 4, 9 | 0d | Business Analyst 1 | 16h | 2,470.4 |
| 11 | 1.2.8 | Business Analysis Group 2 Pt2 Observation and Meetings | 2d | 2019-01-11 | 2019-01-14 | 5, 9 | 0d | Business Analyst 2 | 16h | 2,470.4 |
| 12 | 1.2.9 | Business Analysis Wrapup Meeting | 2d | 2019-01-15 | 2019-01-16 | 4, 5, 6, 7, 8, 9, 10, 11 | 0d | Business Analyst 1; Business Analyst 2; Consultant Requirements Analyst; Project Manager; System Analyst; Documentation Specialist | 96h | 16,319.92 |
| 13 | 1.3 | **Investigate Stakeholder Requirements** | 11d | 2019-01-17 | 2019-01-31 |  | 0d |  | 392h | 67,248 |
| 14 | 1.3.1 | Management and Reporting - Conduct application design workshop #1 | 2d | 2019-01-17 | 2019-01-18 | 12 | 0d | Business Analyst 1; Business Analyst 2; Consultant Requirements Analyst; Project Manager; System Analyst | 80h | 14,195.6 |
| 15 | 1.3.2 | Sales - Conduct application design workshop | 1d | 2019-01-21 | 2019-01-21 | 14 | 2d | Business Analyst 1 | 8h | 1,235.2 |
| 16 | 1.3.3 | Marketing and Development - Conduct application design workshop | 1d | 2019-01-21 | 2019-01-21 | 14 | 2d | Business Analyst 2 | 8h | 1,235.2 |
| 17 | 1.3.4 | Manufacturing - Conduct application design workshop | 1d | 2019-01-22 | 2019-01-22 | 14 | 1d | Business Analyst 2 | 8h | 1,235.2 |
| 18 | 1.3.5 | Customer and Vendor Relations - Conduct application design workshop | 1d | 2019-01-23 | 2019-01-23 | 14 | 0d | Consultant Requirements Analyst | 8h | 1,820.4 |
| 19 | 1.3.6 | Purchasing and Inventory Management - Conduct application design workshop | 2d | 2019-01-21 | 2019-01-22 | 14 | 1d | System Analyst | 16h | 2,664 |
| 20 | 1.3.7 | Accounting - Conduct application design workshop | 2d | 2019-01-21 | 2019-01-22 | 14 | 1d | Consultant Requirements Analyst | 16h | 3,034 |
| 21 | 1.3.8 | Management and Reporting - Conduct application design workshop #2 | 2d | 2019-01-24 | 2019-01-25 | 14, 15, 16, 17, 18, 19, 20 | 0d | Business Analyst 1; Business Analyst 2; Consultant Requirements Analyst; Project Manager; System Analyst; Documentation Specialist | 96h | 16,319.92 |
| 22 | 1.3.9 | System Administration - Conduct application design workshop | 1d | 2019-01-28 | 2019-01-28 | 15, 16, 17, 18, 19, 20, 21 | 0d | System Analyst | 8h | 1,332 |
| 23 | 1.3.10 | Analyze system user requirements gathered from application design workshops | 3d | 2019-01-29 | 2019-01-31 | 22 | 0d | Business Analyst 1; Business Analyst 2; Consultant Requirements Analyst; Project Manager; System Analyst; Documentation Specialist | 144h | 24,176.48 |
| 24 | 1.4 | **Perform feasibility study:** | 4d | 2019-02-01 | 2019-02-06 |  | 0d |  | 144h | 25,053.12 |
| 25 | 1.4.1 | Analyze the system configuration requirements for scale and interoperability/portability. | 3d | 2019-02-01 | 2019-02-05 | 23 | 1d | System Analyst | 24h | 3,996 |
| 26 | 1.4.2 | Begin a technology trawl to identify hardware and software required to deliver the system | 2d | 2019-02-01 | 2019-02-04 | 23 | 0d | Consultant Requirements Analyst | 16h | 3,034 |
| 27 | 1.4.3 | Review and complete technology trawl | 2d | 2019-02-05 | 2019-02-06 | 26 | 0d | Consultant Requirements Analyst; System Analyst | 16h | 3,152.4 |
| 28 | 1.4.4 | Research and identify services that we might contract with to perform currency tracking | 3d | 2019-02-01 | 2019-02-05 | 23 | 5d | Business Analyst 1; Business Analyst 2 | 48h | 7,411.2 |
| 29 | 1.4.5 | Research and identify services that we might contract with to perform fax-to-email | 2d | 2019-02-01 | 2019-02-04 | 23 | 6d | Documentation Specialist | 16h | 2,124.32 |
| 30 | 1.4.6 | Research and identify RFID and barcode labeling requirements and suppliers | 3d | 2019-02-01 | 2019-02-05 | 23 | 1d | Project Manager | 24h | 5,335.2 |

| ID | WBS | Task | Duration | Start | Finish | Predecessors | Total slack | Free slack | Resources | Work | Cost |
| --- | --- | --- | --- | --- | --- | --- | --- | --- | --- | --- | --- |
| 31 | 1.5 | **Project planning:** | 21d | 2019-02-07 | 2019-03-07 |  | 0d |  |  | 464h | 81,335.52 |
| 32 | 1.5.1 | Revisit system requirements, integrating input from the stakeholder analysis and the feasibility study | 4d | 2019-02-07 | 2019-02-12 | 25, 28FF, 29FF, 30, 27 | 0d |  | Project Manager; System Analyst; Documentation Specialist; Consultant Requirements Analyst; Business Analyst 1; Business Analyst 2 | 192h | 32,033.04 |
| 33 | 1.5.2 | Discuss and agree upon plan scope with key stakeholders | 3d | 2019-02-13 | 2019-02-15 | 32 | 0d |  | Business Analyst 1; Documentation Specialist; Project Manager; Consultant Requirements Analyst | 96h | 16,474.88 |
| 34 | 1.5.3 | Rearrange interim deliverables, to reflect what we've learned | 1d | 2019-02-18 | 2019-02-18 | 33 | 0d |  | Project Manager | 8h | 1,778.4 |
| 35 | 1.5.4 | Revise the project plan, resource plan, effort, time and budget estimates and project schedule | 5d | 2019-02-19 | 2019-02-27 | 34 | 0d |  | Project Manager | 40h | 8,892 |
| 36 | 1.5.5 | Review and agree estimate and timescale changes with upper management | 5d | 2019-02-28 | 2019-03-06 | 35 | 0d |  | Business Analyst 1; Documentation Specialist; Project Manager | 120h | 20,378.8 |
| 37 | 1.5.6 | Revise project plans to accommodate any revisions to scope | 1d | 2019-03-07 | 2019-03-07 | 36 | 0d |  | Project Manager | 8h | 1,778.4 |
| 38 | 2 | **Phase I: Develop Basic Integrated Business Management System** | 229d | 2019-02-21 | 2020-01-07 |  | 2d |  |  | 5080h | 744,977.54 |
| 39 | 2.1 | Phase 1 Kickoff Meeting | 2d | 2019-02-21 | 2019-02-22 | 34FS+2d | 3d | 0d | Project Manager; Programmer 1; Business Analyst 1; Database Analyst 1; System Analyst | 80h | 13,622.08 |
| 40 | 2.2 | **Develop Initial System Management Subsystem** | 82d | 2019-02-25 | 2019-06-18 |  | 13d |  |  | 984h | 138,157.2 |
| 41 | 2.2.1 | **DBMS: Install & Configure DBMS Engine & SQL Interface** | 38d | 2019-02-25 | 2019-04-17 |  | 14d |  |  | 176h | 22,571.84 |
| 42 | 2.2.1.1 | · Installing hardware server | 4d | 2019-02-25 | 2019-02-28 | 39 | 14d | 0d | Consultant Network Specialist; Programmer 1 | 64h | 10,196.16 |
| 43 | 2.2.1.2 | · TestNetwork connections | 2d | 2019-03-01 | 2019-03-04 | 42 | 14d | 0d | Consultant Network Specialist; Software Tester 1 | 32h | 3,297.6 |
| 44 | 2.2.1.3 | · Install & Configure DBMS engine | 2d | 2019-03-21 | 2019-03-22 | 43 | 14d | 0d | Database Analyst 1 | 16h | 2,316.8 |
| 45 | 2.2.1.4 | · Install and test SQL interface software | 4d | 2019-04-08 | 2019-04-11 | 44 | 14d | 0d | Database Administrator | 32h | 1,433.28 |
| 46 | 2.2.1.5 | · Evaluate the system | 4d | 2019-04-12 | 2019-04-17 | 45 | 14d | 0d | System Analyst | 32h | 5,328 |
| 47 | 2.2.2 | **DBMS: User Accounts and Permissions** | 24d | 2019-03-25 | 2019-04-25 |  | 30d |  |  | 64h | 8,726.96 |
| 48 | 2.2.2.1 | · Design database | 2d | 2019-03-25 | 2019-03-26 | 39 | 30d | 16d | Database Analyst 1 | 16h | 2,316.8 |
| 49 | 2.2.2.2 | · Implement and test database structure | 3d | 2019-04-18 | 2019-04-22 | 46, 48 | 14d | 0d | Database Administrator | 24h | 1,074.96 |
| 50 | 2.2.2.3 | · Test accounts | 3d | 2019-04-23 | 2019-04-25 | 49 | 31d | 18d | Project Manager | 24h | 5,335.2 |
| 51 | 2.2.3 | **Server App: System management and security application** | 20d | 2019-04-23 | 2019-05-20 |  | 14d |  |  | 160h | 25,566.08 |
| 52 | 2.2.3.1 | · Software requirements analysis | 8d | 2019-04-23 | 2019-05-02 | 49 | 14d | 0d | Business Analyst 1 | 64h | 9,881.6 |
| 53 | 2.2.3.2 | ·Software design | 8d | 2019-05-03 | 2019-05-14 | 52 | 14d | 0d | Programmer 1 | 64h | 10,456.32 |
| 54 | 2.2.3.3 | · Development & coding | 4d | 2019-05-15 | 2019-05-20 | 53 | 14d | 1d | Programmer 2 | 32h | 5,228.16 |

| ID | WBS | Task | Duration | Start | Finish | Predecessors | Total slack | Free slack | Resources | Work | Cost |
| --- | --- | --- | --- | --- | --- | --- | --- | --- | --- | --- | --- |
| 55 | 2.2.4 | **Client App: System management application** | 17d | 2019-03-08 | 2019-04-01 |  | 13d |  |  | 136h | 25,990.56 |
| 56 | 2.2.4.1 | · Software requirements analysis | 8d | 2019-03-08 | 2019-03-19 | 39 | 13d | 0d | Project Manager | 64h | 14,227.2 |
| 57 | 2.2.4.2 | · Software design & code | 9d | 2019-03-20 | 2019-04-01 | 56 | 13d | 0d | Programmer 1 | 72h | 11,763.36 |
| 58 | 2.2.5 | **Integrated User Interface: Provide integrated GUI to implement basic access stubs for all client apps. In Phase 1** | 56d | 2019-04-02 | 2019-06-18 |  | 13d |  |  | 448h | 55,301.76 |
| 59 | 2.2.5.1 | · User navigation requirements analysis | 12d | 2019-04-02 | 2019-04-17 | 57 | 13d | 0d | UI Designer 1 | 96h | 14,292.48 |
| 60 | 2.2.5.2 | · UI design & scripting | 12d | 2019-04-18 | 2019-05-03 | 59 | 13d | 0d | UI Designer 1 | 96h | 14,292.48 |
| 61 | 2.2.5.3 | · UI documentation and acceptance test | 12d | 2019-05-06 | 2019-05-21 | 60 | 13d | 0d | Project Manager | 96h | 21,340.8 |
| 62 | 2.2.5.4 | · Subsystem/component integration test & documentation | 20d | 2019-05-22 | 2019-06-18 | 50, 61, 54 | 13d |  | Software Tester 1 | 160h | 5,376 |
| 63 | 2.3 | **Develop Knowledge Management and Training subsystem** | 85d | 2019-03-11 | 2019-07-05 |  | 0d |  |  | 464h | 69,698.72 |
| 64 | 2.3.1 | **DBMS: Knowledgebase database** | 20d | 2019-03-11 | 2019-04-05 |  | 0d |  |  | 144h | 12,850.4 |
| 65 | 2.3.1.1 | · Design database | 8d | 2019-03-11 | 2019-03-20 | 37 | 0d |  | Database Analyst 1 | 64h | 9,267.2 |
| 66 | 2.3.1.2 | · Implement and test database structures | 10d | 2019-03-25 | 2019-04-05 | 65 | 0d |  | Database Administrator | 80h | 3,583.2 |
| 67 | 2.3.2 | **Server App: Knowledgebase and Training Manual** | 18d | 2019-04-08 | 2019-05-01 |  | 0d |  |  | 144h | 27,768.96 |
| 68 | 2.3.2.1 | · Software requirements analysis | 9d | 2019-04-08 | 2019-04-18 | 66 | 0d |  | Project Manager | 72h | 16,005.6 |
| 69 | 2.3.2.2 | · Software design& code | 9d | 2019-04-19 | 2019-05-01 | 68 | 0d |  | Programmer 1 | 72h | 11,763.36 |
| 70 | 2.3.3 | **Client App: Training Manual and Knowledgebase application** | 47d | 2019-05-02 | 2019-07-05 |  | 0d |  |  | 176h | 29,079.36 |
| 71 | 2.3.3.1 | · Software requirements analysis | 13d | 2019-05-02 | 2019-06-06 | 69 | 0d |  | System Analyst | 104h | 17,316 |
| 72 | 2.3.3.2 | · Software design& code | 9d | 2019-06-07 | 2019-07-05 | 71 | 0d |  | Programmer 1 | 72h | 11,763.36 |
| 73 | 2.4 | **Develop Order Processing & Invoicing subsystem** | 41d | 2019-02-25 | 2019-04-22 |  | 3d |  |  | 280h | 44,483.85 |
| 74 | 2.4.1 | **DBMS: Orders & Invoicing Database – Full implementation** | 4d | 2019-02-25 | 2019-02-28 |  | 3d |  |  | 32h | 3,033.45 |
| 75 | 2.4.1.1 | · Design database | 2d | 2019-02-25 | 2019-02-26 | 39 | 3d | 0d | Database Analyst 1 | 16h | 2,316.8 |
| 76 | 2.4.1.2 | · Implement and test database structures | 2d | 2019-02-27 | 2019-02-28 | 75 | 72d | 0d | Database Administrator | 16h | 716.65 |
| 77 | 2.4.2 | **Server App: Billing/Invoicing** | 8d | 2019-02-25 | 2019-03-06 |  | 72d |  |  | 64h | 10,556.16 |
| 78 | 2.4.2.1 | · Software requirements analysis | 4d | 2019-02-25 | 2019-02-28 | 39 | 72d | 0d | System Analyst | 32h | 5,328 |
| 79 | 2.4.2.2 | · Software design & code | 4d | 2019-03-01 | 2019-03-06 | 76, 78 | 72d | 17d | Programmer 2 | 32h | 5,228.16 |

| ID | WBS | Task | Duration | Start | Finish | Predecessors | Total slack | Free slack | Resources | Work | Cost |
| --- | --- | --- | --- | --- | --- | --- | --- | --- | --- | --- | --- |
| 80 | 2.4.3 | **Client App: Sales** | 24d | 2019-03-20 | 2019-04-22 |  | 54d |  |  | 184h | 30,894.24 |
| 81 | 2.4.3.1 | · Software requirements analysis | 8d | 2019-03-20 | 2019-03-29 | 39 | 55d | 0d | Project Manager | 64h | 14,227.2 |
| 82 | 2.4.3.2 | · Software design & code | 3d | 2019-04-02 | 2019-04-04 | 81, 79 | 54d | 0d | Programmer 1 | 24h | 3,921.12 |
| 83 | 2.4.3.3 | · Subsystem/component integration test & documentation | 12d | 2019-04-05 | 2019-04-22 | 82 | 54d |  | Documentation Specialist | 96h | 12,745.92 |
| 84 | 2.5 | **Develop Billing/Accounting subsystem** | 81d | 2019-03-27 | 2019-07-17 |  | 8d |  |  | 304h | 45,684.89 |
| 85 | 2.5.1 | **DBMS: Budgeting and Accounting** | 15d | 2019-03-27 | 2019-04-16 |  | 50d |  |  | 48h | 4,550.17 |
| 86 | 2.5.1.1 | · Design database | 3d | 2019-03-27 | 2019-03-29 | 39, 98 | 50d | 0d | Database Analyst 1 | 24h | 3,475.2 |
| 87 | 2.5.1.2 | · Implement and test database structures | 3d | 2019-04-12 | 2019-04-16 | 86 | 50d | 45d | Database Administrator | 24h | 1,074.97 |
| 88 | 2.5.2 | **Server App: Billing/Invoicing** | 65d | 2019-04-01 | 2019-06-28 |  | 5d |  |  | 128h | 20,022.4 |
| 89 | 2.5.2.1 | · Software requirements analysis | 8d | 2019-04-01 | 2019-06-18 | 39 | 5d | 0d | Project Manager | 64h | 14,227.2 |
| 90 | 2.5.2.2 | · Software design & code | 3d | 2019-06-19 | 2019-06-21 | 87, 89 | 5d | 0d | System Analyst | 24h | 3,996 |
| 91 | 2.5.2.3 | · Unit test | 5d | 2019-06-24 | 2019-06-28 | 90 | 5d |  | Software Test Engineer | 40h | 1,799.2 |
| 92 | 2.5.3 | **Client App: Accounting** | 18d | 2019-06-24 | 2019-07-17 |  | 61d |  |  | 128h | 21,112.32 |
| 93 | 2.5.3.1 | · Software requirements analysis | 8d | 2019-06-24 | 2019-07-03 | 39, 89 | 61d | 0d | System Analyst | 64h | 10,656 |
| 94 | 2.5.3.2 | · Software design & code | 8d | 2019-07-08 | 2019-07-17 | 93, 90 | 61d | 0d | Programmer 1 | 64h | 10,456.32 |
| 95 | 2.6 | **Develop Interface and Security for Supplier Web UI** | 90d | 2019-02-27 | 2019-07-02 |  | 3d |  |  | 800h | 119,865.44 |
| 96 | 2.6.1 | **DBMS: Update Orders and Invoicing Database – add quotations table** | 18d | 2019-02-27 | 2019-03-22 |  | 3d |  |  | 224h | 15,538.4 |
| 97 | 2.6.1.1 | · Design database | 8d | 2019-02-27 | 2019-03-08 | 75 | 3d | 0d | Database Analyst 1 | 64h | 9,267.2 |
| 98 | 2.6.1.2 | · Implement and test database structures | 10d | 2019-03-11 | 2019-03-22 | 97 | 3d | 0d | Software Tester 1; Database Administrator | 160h | 6,271.2 |
| 99 | 2.6.2 | **Server App: Purchasing/Inventory** | 24d | 2019-03-25 | 2019-04-25 |  | 3d |  |  | 192h | 31,668.48 |
| 100 | 2.6.2.1 | · Software requirements analysis | 12d | 2019-03-25 | 2019-04-09 | 98 | 3d | 0d | System Analyst | 96h | 15,984 |
| 101 | 2.6.2.2 | · Software design& code | 12d | 2019-04-10 | 2019-04-25 | 100 | 3d | 0d | Programmer 2 | 96h | 15,684.48 |
| 102 | 2.6.3 | **Client App: Supplier Web UI** | 48d | 2019-04-26 | 2019-07-02 |  | 3d |  |  | 384h | 72,658.56 |
| 103 | 2.6.3.1 | · Software requirements analysis | 36d | 2019-04-26 | 2019-06-14 | 101 | 3d | 0d | UI Designer 1; Project Manager | 288h | 56,974.08 |
| 104 | 2.6.3.2 | · Software design& code | 12d | 2019-06-17 | 2019-07-02 | 103 | 3d |  | Programmer 1 | 96h | 15,684.48 |

| ID | WBS | Task | Duration | Start | Finish | Predecessors | Total slack | Free slack | Resources | Work | Cost |
| --- | --- | --- | --- | --- | --- | --- | --- | --- | --- | --- | --- |
| 105 | 2.7 | **Develop Currency prediction and Conversion subsystem** | 54d | 2019-07-29 | 2019-10-10 |  | 61d |  |  | 512h | 69,991.36 |
| 106 | 2.7.1 | **Server App: API to Vendor currency database** | 54d | 2019-07-29 | 2019-10-10 |  | 61d |  |  | 512h | 69,991.36 |
| 107 | 2.7.1.1 | - Software requirements analysis | 3d | 2019-07-29 | 2019-07-31 | 94 | 61d | 0d | Project Manager | 24h | 5,335.2 |
| 108 | 2.7.1.2 | - Software design & code | 5d | 2019-08-01 | 2019-08-07 | 107 | 61d | 0d | Programmer 1 | 40h | 6,535.2 |
| 109 | 2.7.1.3 | **Review Currency Prediction and Conversion subsystem** | 46d | 2019-08-08 | 2019-10-10 |  | 61d |  |  | 448h | 58,120.96 |
| 110 | 2.7.1.3.1 | · Integration and regression testing for each component | 10d | 2019-08-08 | 2019-08-21 | 108 | 61d | 0d | Software Tester 1; Project Manager | 160h | 20,472 |
| 111 | 2.7.1.3.2 | · Validate and test results | 10d | 2019-08-22 | 2019-09-04 | 110 | 61d | 0d | Software Tester 1; System Analyst | 160h | 16,008 |
| 112 | 2.7.1.3.3 | · UAT | 10d | 2019-09-05 | 2019-09-25 | 111 | 61d | 0d | System Analyst | 80h | 13,320 |
| 113 | 2.7.1.3.4 | · Sign-off | 6d | 2019-09-26 | 2019-10-10 | 112 | 61d | 59d | Project Manager; UI Designer 1 | 48h | 8,320.96 |
| 114 | 2.8 | **Develop Inventory management subsystem** | 106d | 2019-03-01 | 2019-07-26 |  | 64d |  |  | 376h | 64,888.64 |
| 115 | 2.8.1 | **DBMS: Resources & Inventory Database** | 6d | 2019-04-01 | 2019-04-08 |  | 63d |  |  | 48h | 4,554.72 |
| 116 | 2.8.1.1 | · Design database | 3d | 2019-04-01 | 2019-04-03 | 39 | 63d | 0d | Database Analyst 1 | 24h | 3,475.2 |
| 117 | 2.8.1.2 | · Implement and test database structures | 3d | 2019-04-04 | 2019-04-08 | 116 | 63d | 0d | Software Test Engineer | 24h | 1,079.52 |
| 118 | 2.8.2 | **Server App: Purchasing & Inventory Management** | 16d | 2019-04-09 | 2019-04-30 |  | 63d |  |  | 88h | 13,802.72 |
| 119 | 2.8.2.1 | · Software requirements analysis | 8d | 2019-04-09 | 2019-04-18 | 39, 117 | 63d | 0d | Business Analyst 1 | 64h | 9,881.6 |
| 120 | 2.8.2.2 | · Software design & code | 3d | 2019-04-26 | 2019-04-30 | 119 | 63d | 0d | Programmer 2 | 24h | 3,921.12 |
| 121 | 2.8.3 | **Client App: Inventory Management** | 106d | 2019-03-01 | 2019-07-26 |  | 64d |  |  | 240h | 46,531.2 |
| 122 | 2.8.3.1 | · Software requirements analysis | 10d | 2019-03-01 | 2019-03-14 | 39 | 64d | 0d | System Analyst | 80h | 13,320 |
| 123 | 2.8.3.2 | · Software design & code | 5d | 2019-03-15 | 2019-04-08 | 122 | 64d |  | Programmer 1 | 40h | 6,535.2 |
| 124 | 2.8.3.3 | · Subsystem/component integration test & documentation | 15d | 2019-07-08 | 2019-07-26 | 120 | 64d |  | Project Manager | 120h | 26,676 |
| 125 | 2.9 | **Develop System Management Subsystem (advanced functions)** | 134d | 2019-04-22 | 2019-10-24 |  | 0d |  |  | 824h | 114,100.56 |
| 126 | 2.9.1 | **DBMS: Logging & Audit Trail for Phase I functions.** | 24d | 2019-07-08 | 2019-08-08 |  | 0d |  |  | 192h | 18,218.88 |
| 127 | 2.9.1.1 | · Design database | 12d | 2019-07-08 | 2019-07-23 | 62, 83, 123, 72, 91, 104 | 0d |  | Database Analyst 1 | 96h | 13,900.8 |
| 128 | 2.9.1.2 | · Implement and test database structures | 12d | 2019-07-24 | 2019-08-08 | 127 | 0d |  | Software Test Engineer | 96h | 4,318.08 |

| ID | WBS | Task | Duration | Start | Finish | Predecessors | Total slack | Free slack | Constraint | Resources | Work | Cost |
| --- | --- | --- | --- | --- | --- | --- | --- | --- | --- | --- | --- | --- |
| 129 | 2.9.2 | **GUI & front-end menu implementation** | 134d | 2019-04-22 | 2019-10-24 |  | 0d |  |  |  | 632h | 95,881.68 |
| 130 | 2.9.2.1 | **Client App: Integrated user-navigation/access** | 103d | 2019-04-22 | 2019-09-11 |  | 0d |  |  |  | 384h | 65,680 |
| 131 | 2.9.2.1.1 | **· Software requirements analysis** | 65d | 2019-04-22 | 2019-07-19 |  | 14d |  |  |  | 192h | 37,249.6 |
| 132 | 2.9.2.1.1.1 | · Requirment gathering | 14d | 2019-04-22 | 2019-07-05 | 39 | 14d | 0d |  | Project Manager | 112h | 24,897.6 |
| 133 | 2.9.2.1.1.2 | · Requirment analysis phase | 10d | 2019-07-08 | 2019-07-19 | 132 | 14d |  |  | Business Analyst 1 | 80h | 12,352 |
| 134 | 2.9.2.1.2 | · Software design & code | 12d | 2019-08-09 | 2019-08-26 | 133, 128 | 0d |  |  | Programmer 2 | 96h | 15,684.48 |
| 135 | 2.9.2.1.3 | · Subsystem/component integration test & documentation | 12d | 2019-08-27 | 2019-09-11 | 134 | 0d |  |  | Documentation Specialist | 96h | 12,745.92 |
| 136 | 2.9.2.2 | **Client App: Provide advanced GUI to implement user menus and login form for UI client app.** | 31d | 2019-09-12 | 2019-10-24 |  | 0d |  |  |  | 248h | 30,201.68 |
| 137 | 2.9.2.2.1 | · User navigation requirements analysis | 8d | 2019-09-12 | 2019-09-23 | 135 | 0d |  |  | UI Designer 1 | 64h | 9,528.32 |
| 138 | 2.9.2.2.2 | · UI design & scripting | 9d | 2019-09-24 | 2019-10-04 | 137 | 0d |  |  | UI Designer 1 | 72h | 10,719.36 |
| 139 | 2.9.2.2.3 | · GUI unit tests | 7d | 2019-10-07 | 2019-10-15 | 138 | 0d |  |  | Software Test Engineer | 56h | 2,518.88 |
| 140 | 2.9.2.2.4 | · UI documentation and acceptance test | 7d | 2019-10-16 | 2019-10-24 | 135, 139 | 0d |  |  | Documentation Specialist | 56h | 7,435.12 |
| 141 | 2.10 | **Phase I Delivery Activities** | 53d | 2019-10-25 | 2020-01-07 |  | 0d |  |  |  | 456h | 64,484.8 |
| 142 | 2.10.1 | **Phase I Integration Test** | 12d | 2019-10-25 | 2019-11-11 |  | 0d |  |  |  | 96h | 9,455.04 |
| 143 | 2.10.1.1 | **· Integration test of Phase I software components** | 12d | 2019-10-25 | 2019-11-11 |  | 0d |  |  |  | 96h | 9,455.04 |
| 144 | 2.10.1.1.1 | · Redesign and rework following integration tests | 6d | 2019-10-25 | 2019-11-01 | 140, 124 | 0d |  |  | Programmer 1 | 48h | 7,842.24 |
| 145 | 2.10.1.1.2 | · Phase I software documentation and acceptance test | 6d | 2019-11-04 | 2019-11-11 | 144 | 0d |  |  | Software Tester 1 | 48h | 1,612.8 |
| 146 | 2.10.2 | **Phase IChange management** | 14d | 2019-11-14 | 2019-12-03 |  | 2d |  |  |  | 112h | 22,025.6 |
| 147 | 2.10.2.1 | · Training on new work procedures | 4d | 2019-11-14 | 2019-11-19 | 145 | 7d | 5d |  | Project Manager; System Analyst | 64h | 12,441.6 |
| 148 | 2.10.2.2 | · Business process changes | 3d | 2019-11-27 | 2019-11-29 | 147 | 2d | 0d | start no earlier than 2019-11-27 | Business Analyst 1; Project Manager | 32h | 6,027.2 |
| 149 | 2.10.2.3 | · User system training | 2d | 2019-12-02 | 2019-12-03 | 148 | 2d | 0d |  | Project Manager | 16h | 3,556.8 |
| 150 | 2.10.3 | **New process & systems evaluation** | 17d | 2019-12-04 | 2019-12-26 |  | 2d |  |  |  | 184h | 18,776.96 |
| 151 | 2.10.3.1 | · Phase I systems installation | 7d | 2019-12-04 | 2019-12-12 | 149 | 2d | 0d |  | System Analyst | 56h | 9,324 |
| 152 | 2.10.3.2 | · Phase I Testing | 6d | 2019-12-13 | 2019-12-20 | 151 | 2d | 0d |  | Software Test Engineer; Software Tester 1 | 96h | 3,771.84 |
| 153 | 2.10.3.3 | · Phase I System Documentation | 2d | 2019-12-23 | 2019-12-24 | 152 | 2d | 0d |  | Documentation Specialist | 16h | 2,124.32 |
| 154 | 2.10.3.4 | · Phase I User evaluation | 1d | 2019-12-25 | 2019-12-25 | 153 | 2d | 0d |  | Project Manager | 8h | 1,778.4 |
| 155 | 2.10.3.5 | · Evaluate the feedback | 1d | 2019-12-26 | 2019-12-26 | 154 | 2d | 0d |  | Project Manager | 8h | 1,778.4 |

| ID | WBS | Task | Type | Duration | Start | Finish | Predecessors | Total slack | Free slack | Resources | Work | Cost |
| --- | --- | --- | --- | --- | --- | --- | --- | --- | --- | --- | --- | --- |
| 156 | 2.10.4 | **Project Review** |  | 8d | 2019-12-27 | 2020-01-07 |  | 2d |  |  | 64h | 14,227.2 |
| 157 | 2.10.4.1 | · Project plan review for Phase I |  | 4d | 2019-12-27 | 2020-01-01 | 155 | 2d | 0d | Project Manager | 32h | 7,113.6 |
| 158 | 2.10.4.2 | · Management approval and signoff for Phase I |  | 4d | 2020-01-02 | 2020-01-07 | 157, 113 | 2d | 0d | Project Manager | 32h | 7,113.6 |
| 159 | 3 | **Phase II: Develop Advanced Integrated Business Management System** |  | 167d | 2019-11-12 | 2020-07-01 |  | 0d |  |  | 2160h | 308,878.48 |
| 160 | 3.1 | Phase 2 Kickoff Meeting |  | 2d | 2019-11-12 | 2019-11-13 | 145 | 0d |  | Business Analyst 1; Database Administrator; Documentation Specialist; Programmer 1; Project Manager; System Analyst; UI Designer 1 | 112h | 16,528.32 |
| 161 | 3.2 | **Phase 1 follow up** |  | 6d | 2019-11-20 | 2019-11-27 |  | 0d |  |  | 88h | 16,787.2 |
| 162 | 3.2.1 | Review Phase I software components |  | 5d | 2019-11-20 | 2019-11-26 | 160 | 0d |  | Project Manager | 40h | 8,892 |
| 163 | 3.2.2 | Review Phase I hardware components |  | 5d | 2019-11-20 | 2019-11-26 | 160 | 25d |  | System Analyst | 40h | 6,660 |
| 164 | 3.2.3 | Upgrade the software requirements |  | 1d | 2019-11-27 | 2019-11-27 | 162 | 0d |  | Business Analyst 1 | 8h | 1,235.2 |
| 165 | 3.3 | **Upgrade System Management Subsystem (Basic)** |  | 36d | 2019-11-14 | 2020-01-02 |  | 10d |  |  | 328h | 49,711.04 |
| 166 | 3.3.1 | **Server App: Upgraded system management and security management** |  | 34d | 2019-11-14 | 2019-12-31 |  | 411d |  |  | 120h | 19,246.4 |
| 167 | 3.3.1.1 | - Software requirements analysis | milestone | 5d | 2019-11-14 | 2019-11-20 | 160 | 411d | 0d | Business Analyst 1 | 40h | 6,176 |
| 168 | 3.3.1.2 | - Software design |  | 5d | 2019-11-21 | 2019-12-17 | 167 | 411d | 0d | Programmer 2 | 40h | 6,535.2 |
| 169 | 3.3.1.3 | - Software code |  | 5d | 2019-12-25 | 2019-12-31 | 168 | 411d |  | Programmer 2 | 40h | 6,535.2 |
| 170 | 3.3.2 | **Client App: System management and security integration** |  | 24d | 2019-11-28 | 2019-12-31 |  | 0d |  |  | 192h | 29,744.96 |
| 171 | 3.3.2.1 | - Software requirements analysis | milestone | 14d | 2019-11-28 | 2019-12-17 | 164 | 0d |  | UI Designer 1 | 112h | 16,674.56 |
| 172 | 3.3.2.2 | - Software design |  | 5d | 2019-12-18 | 2019-12-24 | 171 | 0d |  | Programmer 2 | 40h | 6,535.2 |
| 173 | 3.3.2.3 | - Software code |  | 5d | 2019-12-25 | 2019-12-31 | 172 | 0d |  | Programmer 1 | 40h | 6,535.2 |
| 174 | 3.3.3 | Subsystem integration testing |  | 2d | 2020-01-01 | 2020-01-02 | 173, 163 | 0d |  | Software Test Engineer | 16h | 719.68 |
| 175 | 3.4 | **Develop Operations Management & Reporting subsystem** |  | 67d | 2019-12-04 | 2020-03-05 |  | 7d |  |  | 312h | 42,671.52 |
| 176 | 3.4.1 | **DBMS: Sales and Market** |  | 27d | 2020-01-15 | 2020-02-20 |  | 2d |  |  | 168h | 16,325.6 |
| 177 | 3.4.1.1 | - Design database by creating tables, developing packages and integrating with the server application |  | 10d | 2020-01-15 | 2020-01-28 | 158, 160 | 2d | 0d | Database Administrator | 80h | 3,583.2 |
| 178 | 3.4.1.2 | - Implement and test database structures |  | 6d | 2020-01-29 | 2020-02-05 | 177 | 2d | 0d | Database Analyst 1 | 48h | 6,950.4 |
| 179 | 3.4.1.3 | - Gather information regarding previous sales and market demands. |  | 5d | 2020-02-14 | 2020-02-20 | 178 | 6d | 0d | Database Analyst 1 | 40h | 5,792 |

| ID | WBS | Task | Type | Duration | Start | Finish | Predecessors | Total slack | Free slack | Constraint | Resources | Work | Cost |
| --- | --- | --- | --- | --- | --- | --- | --- | --- | --- | --- | --- | --- | --- |
| 180 | 3.4.2 | **Server App: Sales Analysis and Reporting** |  | 6d | 2019-12-04 | 2019-12-11 |  | 43d |  |  |  | 48h | 10,199.04 |
| 181 | 3.4.2.1 | - Software requirements analysis |  | 5d | 2019-12-04 | 2019-12-10 | 164 | 43d | 0d | start no earlier than 2019-12-03 | Project Manager | 40h | 8,892 |
| 182 | 3.4.2.2 | **- Software design & code** |  | 1d | 2019-12-11 | 2019-12-11 |  | 52d |  |  |  | 8h | 1,307.04 |
| 183 | 3.4.2.2.1 | - Write a program to display the analysis using charts and graphs for easy understanding. |  | 1d | 2019-12-11 | 2019-12-11 | 181 | 52d | 0d |  | Programmer 2 | 8h | 1,307.04 |
| 184 | 3.4.3 | **Client App: Management and Reporting** |  | 59d | 2019-12-12 | 2020-03-03 |  | 7d |  |  |  | 80h | 15,427.2 |
| 185 | 3.4.3.1 | - Software requirements analysis |  | 5d | 2019-12-12 | 2019-12-18 | 183 | 52d | 46d |  | Project Manager | 40h | 8,892 |
| 186 | 3.4.3.2 | **- Software design & code** |  | 5d | 2020-02-26 | 2020-03-03 |  | 7d |  |  |  | 40h | 6,535.2 |
| 187 | 3.4.3.2.1 | - Develop a user friendly UI that shows the graph and charts of sales against time duration and scale. |  | 1d | 2020-02-26 | 2020-02-26 | 185, 179 | 7d | 0d |  | Programmer 1 | 8h | 1,307.04 |
| 188 | 3.4.3.2.2 | - Application used to report |  | 2d | 2020-02-27 | 2020-02-28 | 187 | 7d | 0d |  | Programmer 1 | 16h | 2,614.08 |
| 189 | 3.4.3.2.3 | - Develop the GUI |  | 1d | 2020-03-02 | 2020-03-02 | 188 | 7d | 0d |  | Programmer 1 | 8h | 1,307.04 |
| 190 | 3.4.3.2.4 | - Unit testing of GUI |  | 1d | 2020-03-03 | 2020-03-03 | 189 | 7d | 0d |  | Programmer 1 | 8h | 1,307.04 |
| 191 | 3.4.4 | Subsystem integration testing |  | 2d | 2020-03-04 | 2020-03-05 | 190 | 7d |  |  | Software Test Engineer | 16h | 719.68 |
| 192 | 3.5 | **Develop Forecasting and Analysis subsystem** |  | 26d | 2020-02-06 | 2020-03-12 |  | 2d |  |  |  | 152h | 22,282.88 |
| 193 | 3.5.1 | **DBMS: Update Sales and Market Database – add forecasting & analysis table** |  | 2d | 2020-02-06 | 2020-02-07 |  | 2d |  |  |  | 16h | 2,316.8 |
| 194 | 3.5.1.1 | - Implement and test database structures |  | 2d | 2020-02-06 | 2020-02-07 | 181, 178 | 2d | 0d |  | Database Analyst 1 | 16h | 2,316.8 |
| 195 | 3.5.2 | **Server App: Demand Forecasting** |  | 22d | 2020-02-10 | 2020-03-10 |  | 2d |  |  |  | 120h | 19,246.4 |
| 196 | 3.5.2.1 | - Software requirements analysis | milestone | 5d | 2020-02-10 | 2020-02-14 | 194 | 2d | 0d |  | Business Analyst 1 | 40h | 6,176 |
| 197 | 3.5.2.2 | - Software design |  | 5d | 2020-02-18 | 2020-02-25 | 196 | 2d | 0d |  | Programmer 1 | 40h | 6,535.2 |
| 198 | 3.5.2.3 | - Software code |  | 5d | 2020-03-04 | 2020-03-10 | 197 | 2d | 0d |  | Programmer 1 | 40h | 6,535.2 |
| 199 | 3.5.3 | Subsystem integration testing |  | 2d | 2020-03-11 | 2020-03-12 | 198 | 2d |  |  | Software Test Engineer | 16h | 719.68 |
| 200 | 3.6 | **Develop Product code database and Lookup subsystem** |  | 16d | 2020-01-03 | 2020-01-24 |  | 0d |  |  |  | 264h | 30,198.08 |
| 201 | 3.6.1 | **DBMS: Product Management (only product code-related tables)** |  | 12d | 2020-01-03 | 2020-01-20 |  | 0d |  |  |  | 96h | 7,500.16 |
| 202 | 3.6.1.1 | - Design database by creating tables, developing packages and integrating with the server application |  | 8d | 2020-01-03 | 2020-01-14 | 174 | 0d |  |  | Database Administrator | 64h | 2,866.56 |
| 203 | 3.6.1.2 | - Implement and test database structures |  | 4d | 2020-01-15 | 2020-01-20 | 202 | 0d |  |  | Database Analyst 1 | 32h | 4,633.6 |

| ID | WBS | Task | Duration | Start | Finish | Predecessors | Total slack | Free slack | Resources | Work | Cost |
| --- | --- | --- | --- | --- | --- | --- | --- | --- | --- | --- | --- |
| 204 | 3.6.2 | **Server App: Marketing and Development (functions related to product code)** | 11d | 2020-01-08 | 2020-01-22 |  | 0d |  |  | 40h | 6,319.68 |
| 205 | 3.6.2.1 | - Software requirements analysis | 3d | 2020-01-08 | 2020-01-10 | 174 | 6d |  | Business Analyst 1 | 24h | 3,705.6 |
| 206 | 3.6.2.2 | - Software design & code | 2d | 2020-01-21 | 2020-01-22 | 205, 203 | 0d |  | Programmer 1 | 16h | 2,614.08 |
| 207 | 3.6.3 | **Client App: Marketing and Development Application (functions related to product code)** | 9d | 2020-01-03 | 2020-01-15 |  | 5d |  |  | 56h | 8,801.28 |
| 208 | 3.6.3.1 | - Software requirements analysis | 3d | 2020-01-03 | 2020-01-07 | 174 | 5d | 0d | UI Designer 1 | 24h | 3,573.12 |
| 209 | 3.6.3.2 | - Software design & code | 4d | 2020-01-10 | 2020-01-15 | 208 | 5d |  | Programmer 1 | 32h | 5,228.16 |
| 210 | 3.6.4 | **Service: Product code lookup service** | 7d | 2020-01-03 | 2020-01-13 |  | 7d |  |  | 56h | 6,857.28 |
| 211 | 3.6.4.1 | - Software requirements analysis | 3d | 2020-01-03 | 2020-01-07 | 174 | 7d | 0d | Business Analyst 1 | 24h | 3,705.6 |
| 212 | 3.6.4.2 | - Software design & code | 2d | 2020-01-08 | 2020-01-09 | 211 | 7d | 0d | Programmer 1 | 16h | 2,614.08 |
| 213 | 3.6.4.3 | - Integration testing | 2d | 2020-01-10 | 2020-01-13 | 212 | 7d |  | Software Tester 1 | 16h | 537.6 |
| 214 | 3.6.5 | Subsystem integration testing | 2d | 2020-01-23 | 2020-01-24 | 213, 206, 209 | 0d |  | Software Test Engineer | 16h | 719.68 |
| 215 | 3.7 | **Develop Currency prediction and Conversion subsystem** | 7d | 2020-01-13 | 2020-01-21 |  | 39d |  |  | 56h | 7,039.36 |
| 216 | 3.7.1 | **Server App: API to Vendor currency database** | 5d | 2020-01-13 | 2020-01-17 |  | 39d |  |  | 40h | 6,319.68 |
| 217 | 3.7.1.1 | - Software requirements analysis | 3d | 2020-01-13 | 2020-01-15 | 174 | 39d | 0d | Business Analyst 1 | 24h | 3,705.6 |
| 218 | 3.7.1.2 | - Software design & code | 2d | 2020-01-16 | 2020-01-17 | 217 | 39d | 0d | Programmer 1 | 16h | 2,614.08 |
| 219 | 3.7.2 | Subsystem integration testing | 2d | 2020-01-20 | 2020-01-21 | 218 | 39d |  | Software Test Engineer | 16h | 719.68 |
| 220 | 3.8 | **Upgrade System Management Subsystem (advanced functions)** | 21d | 2020-01-29 | 2020-02-26 |  | 0d |  |  | 152h | 17,057.04 |
| 221 | 3.8.1 | **DBMS: Logging & Audit Trail for Phase II functions.** | 10d | 2020-01-29 | 2020-02-11 |  | 0d |  |  | 48h | 3,750.08 |
| 222 | 3.8.1.1 | - Design database by creating tables, developing packages and integrating with the server application | 4d | 2020-01-29 | 2020-02-03 | 214 | 0d |  | Database Administrator | 32h | 1,433.28 |
| 223 | 3.8.1.2 | - Implement and test database structures | 2d | 2020-02-10 | 2020-02-11 | 222 | 0d |  | Database Analyst 1 | 16h | 2,316.8 |
| 224 | 3.8.2 | **DBMS: Permissions for Phase II functions.** | 2d | 2020-02-12 | 2020-02-13 |  | 0d |  |  | 16h | 2,316.8 |
| 225 | 3.8.2.1 | - Update database | 1d | 2020-02-12 | 2020-02-12 | 223 | 0d |  | Database Analyst 1 | 8h | 1,158.4 |
| 226 | 3.8.2.2 | - Implement and test database structures | 1d | 2020-02-13 | 2020-02-13 | 225 | 1d |  | Database Analyst 1 | 8h | 1,158.4 |
| 227 | 3.8.3 | **Server App: Upgraded system management and security application for Phase II functions** | 3d | 2020-02-13 | 2020-02-17 |  | 0d |  |  | 24h | 3,971.04 |
| 228 | 3.8.3.1 | - Software requirements analysis | 2d | 2020-02-13 | 2020-02-14 | 225 | 0d |  | System Analyst | 16h | 2,664 |
| 229 | 3.8.3.2 | - Software design & code | 1d | 2020-02-17 | 2020-02-17 | 228, 226 | 0d |  | Programmer 1 | 8h | 1,307.04 |

| ID | WBS | Task | Duration | Start | Finish | Predecessors | Total slack | Resources | Work | Cost |
| --- | --- | --- | --- | --- | --- | --- | --- | --- | --- | --- |
| 230 | 3.8.4 | **Client App: user-navigation/access and reporting for Phase II Enhancements** | 2d | 2020-02-18 | 2020-02-19 |  | 0d |  | 16h | 2,542.24 |
| 231 | 3.8.4.1 | - Software requirements analysis | 1d | 2020-02-18 | 2020-02-18 | 229 | 0d | Business Analyst 1 | 8h | 1,235.2 |
| 232 | 3.8.4.2 | - Software design & code | 1d | 2020-02-19 | 2020-02-19 | 231 | 0d | Programmer 1 | 8h | 1,307.04 |
| 233 | 3.8.5 | **Client app: Provide advanced GUI to implement user menus and login form for UI client app. (Phase II)** | 3d | 2020-02-20 | 2020-02-24 |  | 0d |  | 32h | 3,757.2 |
| 234 | 3.8.5.1 | - User navigation requirements analysis | 1d | 2020-02-20 | 2020-02-20 | 232 | 0d | Business Analyst 1 | 8h | 1,235.2 |
| 235 | 3.8.5.2 | - UI design & scripting | 1d | 2020-02-21 | 2020-02-21 | 234 | 0d | UI Designer 1 | 8h | 1,191.04 |
| 236 | 3.8.5.3 | - UI documentation and acceptance test | 1d | 2020-02-24 | 2020-02-24 | 235 | 0d | Documentation Specialist; Software Tester 1 | 16h | 1,330.96 |
| 237 | 3.8.6 | Subsystem integration testing | 2d | 2020-02-25 | 2020-02-26 | 236 | 0d | Software Test Engineer | 16h | 719.68 |
| 238 | 3.9 | **Phase II Delivery Activities** | 81d | 2020-03-11 | 2020-07-01 |  | 0d |  | 696h | 106,603.04 |
| 239 | 3.9.1 | Integrate all the software components developed. | 4d | 2020-03-11 | 2020-03-16 | 237 | 0d | Programmer 1 | 32h | 5,228.16 |
| 240 | 3.9.2 | **Phase II Integration Test** | 26d | 2020-03-17 | 2020-04-21 |  | 0d |  | 272h | 25,868.48 |
| 241 | 3.9.2.1 | - Integration test of Phase II software components | 8d | 2020-03-17 | 2020-03-26 | 239, 219, 214, 199, 191, 174 | 0d | Software Tester 1 | 64h | 2,150.4 |
| 242 | 3.9.2.2 | - Redesign and rework following integration tests | 10d | 2020-03-27 | 2020-04-09 | 241 | 0d | Programmer 1 | 80h | 13,070.4 |
| 243 | 3.9.2.3 | - Phase II software documentation and acceptance test | 8d | 2020-04-10 | 2020-04-21 | 242 | 0d | Documentation Specialist; Software Tester 1 | 128h | 10,647.68 |
| 244 | 3.9.3 | **Phase II change management** | 3d | 2020-04-22 | 2020-04-24 |  | 0d |  | 24h | 5,335.2 |
| 245 | 3.9.3.1 | - Business process changes | 1d | 2020-04-22 | 2020-04-22 | 243 | 0d | Project Manager | 8h | 1,778.4 |
| 246 | 3.9.3.2 | - Training in new work procedures | 1d | 2020-04-23 | 2020-04-23 | 245 | 0d | Project Manager | 8h | 1,778.4 |
| 247 | 3.9.3.3 | - User system training | 1d | 2020-04-24 | 2020-04-24 | 246 | 0d | Project Manager | 8h | 1,778.4 |
| 248 | 3.9.4 | **New process & systems evaluation** | 30d | 2020-04-27 | 2020-06-05 |  | 0d |  | 224h | 42,312 |
| 249 | 3.9.4.1 | - Phase II systems installation | 10d | 2020-04-27 | 2020-05-08 | 247 | 0d | Project Manager; System Analyst | 128h | 24,883.2 |
| 250 | 3.9.4.2 | - Phase II pilot study | 8d | 2020-05-21 | 2020-06-01 | 249 | 0d | Project Manager | 64h | 14,227.2 |
| 251 | 3.9.4.3 | - Phase II user evaluation | 2d | 2020-06-02 | 2020-06-03 | 250 | 0d | System Analyst | 16h | 2,664 |
| 252 | 3.9.4.4 | - Evaluation feedback and client review | 2d | 2020-06-04 | 2020-06-05 | 251 | 0d | Software Tester 1 | 16h | 537.6 |
| 253 | 3.9.5 | **Project Review (Stagegate)** | 18d | 2020-06-08 | 2020-07-01 |  | 0d |  | 144h | 27,859.2 |
| 254 | 3.9.5.1 | - Stagegate (project plan) review for Phase II | 2d | 2020-06-08 | 2020-06-09 | 252 | 0d | Project Manager; Business Analyst 1; System Analyst | 48h | 8,691.2 |
| 255 | 3.9.5.2 | - Agreement of client issues to be remedied in Phase II | 4d | 2020-06-10 | 2020-06-15 | 254 | 0d | Project Manager; Business Analyst 1 | 64h | 12,054.4 |
| 256 | 3.9.5.3 | - Client approval and signoff for Phase II | 4d | 2020-06-26 | 2020-07-01 | 255 | 0d | Project Manager | 32h | 7,113.6 |

| ID | WBS | Task | Duration | Start | Finish | Predecessors | Total slack | Free slack | Resources | Work | Cost |
| --- | --- | --- | --- | --- | --- | --- | --- | --- | --- | --- | --- |
| 257 | 4 | **Phase III: Develop Integrated Business Management System** | 331d | 2020-04-22 | 2021-07-28 |  | 0d |  |  | 6384h | 1,017,508.01 |
| 258 | 4.1 | Phase III Kickoff Meeting | 4d | 2020-04-22 | 2020-04-28 | 243 | 5d | 0d | Business Analyst 1; Project Manager; Programmer 1; System Analyst; Database Administrator; Database Analyst 1; UI Designer 1 | 112h | 16,720.81 |
| 259 | 4.2 | **Follow up on Phase II activities** | 42d | 2020-04-29 | 2020-06-25 |  | 4d |  |  | 560h | 96,262.72 |
| 260 | 4.2.1 | · Review lessons learned from Phase 2 prototype and user evaluation | 16d | 2020-04-29 | 2020-05-20 | 258 | 5d | 0d | Project Manager; Business Analyst 1; Programmer 1; System Analyst | 256h | 45,221.12 |
| 261 | 4.2.2 | · Review software and hardware requirements | 12d | 2020-05-21 | 2020-06-05 | 260 | 5d | 0d | System Analyst; Database Analyst 1; UI Designer 1 | 240h | 36,814.4 |
| 262 | 4.2.3 | · Agree on changes to be made and assign tasks | 8d | 2020-06-16 | 2020-06-25 | 261 | 4d | 0d | Project Manager | 64h | 14,227.2 |
| 263 | 4.3 | **Upgrade System Management Subsystem (Basic)** | 68d | 2020-06-26 | 2020-09-29 |  | 88d |  |  | 544h | 91,339.84 |
| 264 | 4.3.1 | **Server App: Upgraded system management and security management** | 24d | 2020-06-26 | 2020-07-29 |  | 88d |  |  | 192h | 31,668.48 |
| 265 | 4.3.1.1 | · Software requirements analysis | 12d | 2020-06-26 | 2020-07-13 | 262 | 88d | 0d | System Analyst | 96h | 15,984 |
| 266 | 4.3.1.2 | · Software design& code | 12d | 2020-07-14 | 2020-07-29 | 265 | 88d | 0d | Programmer 1 | 96h | 15,684.48 |
| 267 | 4.3.2 | **Client App: System management and security integration** | 22d | 2020-07-30 | 2020-08-28 |  | 88d |  |  | 176h | 33,468.48 |
| 268 | 4.3.2.1 | · Software requirements analysis | 10d | 2020-07-30 | 2020-08-12 | 262, 266 | 88d | 0d | Project Manager | 80h | 17,784 |
| 269 | 4.3.2.2 | · Software design& code | 12d | 2020-08-13 | 2020-08-28 | 268 | 88d | 0d | Programmer 1 | 96h | 15,684.48 |
| 270 | 4.3.3 | **Client app: Provide integrated GUI to implement basic access stubs for all client apps.In Phase II** | 22d | 2020-08-31 | 2020-09-29 |  | 88d |  |  | 176h | 26,202.88 |
| 271 | 4.3.3.1 | · User navigation requirements analysis | 10d | 2020-08-31 | 2020-09-11 | 262, 269 | 88d | 0d | UI Designer 1 | 80h | 11,910.4 |
| 272 | 4.3.3.2 | · UI design& scripting | 12d | 2020-09-14 | 2020-09-29 | 271 | 88d |  | UI Designer 1 | 96h | 14,292.48 |
| 273 | 4.4 | **Develop Product management subsystem** | 68d | 2020-07-02 | 2020-10-05 |  | 0d |  |  | 528h | 78,356.8 |
| 274 | 4.4.1 | **DBMS: Product management - continue development** | 22d | 2020-07-02 | 2020-07-31 |  | 0d |  |  | 176h | 15,883.84 |
| 275 | 4.4.1.1 | · Design additional tables | 10d | 2020-07-02 | 2020-07-15 | 262, 256 | 0d |  | Database Analyst 1 | 80h | 11,584 |
| 276 | 4.4.1.2 | · Implement and test database structures | 12d | 2020-07-16 | 2020-07-31 | 275 | 0d |  | Database Administrator | 96h | 4,299.84 |
| 277 | 4.4.2 | **Server App: Update Marketing and Development Application** | 22d | 2020-08-03 | 2020-09-01 |  | 2d |  |  | 176h | 29,004.48 |
| 278 | 4.4.2.1 | · Software requirements analysis | 10d | 2020-08-03 | 2020-08-14 | 275, 276 | 2d | 0d | System Analyst | 80h | 13,320 |
| 279 | 4.4.2.2 | · Software design& code | 12d | 2020-08-17 | 2020-09-01 | 278 | 2d | 0d | Programmer 2 | 96h | 15,684.48 |
| 280 | 4.4.3 | **Client App: Update Marketing and Development Application** | 22d | 2020-09-04 | 2020-10-05 |  | 84d |  |  | 176h | 33,468.48 |
| 281 | 4.4.3.1 | · Software requirements analysis | 10d | 2020-09-04 | 2020-09-17 | 278, 279 | 84d | 0d | Project Manager | 80h | 17,784 |
| 282 | 4.4.3.2 | · Software design& code | 12d | 2020-09-18 | 2020-10-05 | 281 | 84d |  | Programmer 2 | 96h | 15,684.48 |

| ID | WBS | Task | Duration | Start | Finish | Predecessors | Total slack | Free slack | Resources | Work | Cost |
| --- | --- | --- | --- | --- | --- | --- | --- | --- | --- | --- | --- |
| 283 | 4.5 | **Develop Customer and Vendor Relations subsystem** | 94d | 2020-07-16 | 2020-11-24 |  | 48d |  |  | 576h | 86,894.4 |
| 284 | 4.5.1 | **DBMS: Customer Relationship Management** | 24d | 2020-07-16 | 2020-08-18 |  | 49d |  |  | 192h | 18,200.64 |
| 285 | 4.5.1.1 | · Design database | 12d | 2020-07-16 | 2020-07-31 | 275 | 49d | 0d | Database Analyst 1 | 96h | 13,900.8 |
| 286 | 4.5.1.2 | · Implement and test database structures | 12d | 2020-08-03 | 2020-08-18 | 285 | 49d | 0d | Database Administrator | 96h | 4,299.84 |
| 287 | 4.5.2 | **Server App: CRM& Vendor Relations** | 24d | 2020-08-19 | 2020-09-21 |  | 49d |  |  | 192h | 37,025.28 |
| 288 | 4.5.2.1 | · Software requirements analysis | 12d | 2020-08-19 | 2020-09-03 | 285, 286 | 49d | 0d | Project Manager | 96h | 21,340.8 |
| 289 | 4.5.2.2 | · Software design& code | 12d | 2020-09-04 | 2020-09-21 | 288 | 49d | 0d | Programmer 1 | 96h | 15,684.48 |
| 290 | 4.5.3 | **Client App: Customer and Vendor Relations** | 34d | 2020-10-08 | 2020-11-24 |  | 48d |  |  | 192h | 31,668.48 |
| 291 | 4.5.3.1 | · Software requirements analysis | 12d | 2020-10-08 | 2020-10-23 | 288, 289 | 48d | 0d | System Analyst | 96h | 15,984 |
| 292 | 4.5.3.2 | · Software design& code | 12d | 2020-11-09 | 2020-11-24 | 291 | 48d |  | Programmer 2 | 96h | 15,684.48 |
| 293 | 4.6 | **Upgrade Operations Management & Reporting subsystem** | 70d | 2020-08-03 | 2020-11-06 |  | 0d |  |  | 576h | 81,537.6 |
| 294 | 4.6.1 | **DBMS: Sales and Market Phase III functions** | 24d | 2020-08-03 | 2020-09-03 |  | 0d |  |  | 192h | 18,200.64 |
| 295 | 4.6.1.1 | · Design database | 12d | 2020-08-03 | 2020-08-18 | 276 | 0d |  | Database Analyst 1 | 96h | 13,900.8 |
| 296 | 4.6.1.2 | · Implement and test database structures | 12d | 2020-08-19 | 2020-09-03 | 295 | 0d |  | Database Administrator | 96h | 4,299.84 |
| 297 | 4.6.2 | **Server App: Upgraded Sales Analysis and Reporting for Phase III functions** | 24d | 2020-09-04 | 2020-10-07 |  | 0d |  |  | 192h | 31,668.48 |
| 298 | 4.6.2.1 | · Software requirements analysis | 12d | 2020-09-04 | 2020-09-21 | 296, 279 | 0d |  | System Analyst | 96h | 15,984 |
| 299 | 4.6.2.2 | · Software design& code | 12d | 2020-09-22 | 2020-10-07 | 298 | 0d |  | Programmer 1 | 96h | 15,684.48 |
| 300 | 4.6.3 | **Client App: Management and Reporting for Phase II and III enhancements** | 34d | 2020-09-22 | 2020-11-06 |  | 0d |  |  | 192h | 31,668.48 |
| 301 | 4.6.3.1 | · Software requirements analysis | 12d | 2020-09-22 | 2020-10-07 | 298 | 0d |  | System Analyst | 96h | 15,984 |
| 302 | 4.6.3.2 | · Software design& code | 12d | 2020-10-08 | 2020-11-06 | 301, 299 | 0d |  | Programmer 2 | 96h | 15,684.48 |
| 303 | 4.7 | **Upgrade System Management Subsystem (advanced functions)** | 60d | 2020-11-09 | 2021-01-29 |  | 0d |  |  | 960h | 152,504.64 |
| 304 | 4.7.1 | **DBMS: Logging & Audit Trail for Phase III functions.** | 34d | 2020-11-09 | 2020-12-24 |  | 11d |  |  | 192h | 18,200.64 |
| 305 | 4.7.1.1 | · Design database | 12d | 2020-11-09 | 2020-11-24 | 302 | 11d | 0d | Database Analyst 1 | 96h | 13,900.8 |
| 306 | 4.7.1.2 | · Implement and test database structures | 12d | 2020-11-25 | 2020-12-24 | 305 | 11d | 0d | Database Administrator | 96h | 4,299.84 |

| ID | WBS | Task | Duration | Start | Finish | Predecessors | Total slack | Resources | Work | Cost |
| --- | --- | --- | --- | --- | --- | --- | --- | --- | --- | --- |
| 307 | 4.7.2 | **Server App: Upgraded system management and security application for Phase III functions** | 48d | 2020-11-09 | 2021-01-13 |  | 0d |  | 192h | 31,668.48 |
| 308 | 4.7.2.1 | · Software requirements analysis | 12d | 2020-11-09 | 2020-11-24 | 302 | 0d | System Analyst | 96h | 15,984 |
| 309 | 4.7.2.2 | · Software design & code | 12d | 2020-12-29 | 2021-01-13 | 308, 306 | 12d | Programmer 1 | 96h | 15,684.48 |
| 310 | 4.7.3 | **Client App: user-navigation/access and reporting for Phase II Enhancements** | 24d | 2020-11-25 | 2020-12-28 |  | 0d |  | 192h | 37,025.28 |
| 311 | 4.7.3.1 | · Software requirements analysis | 12d | 2020-11-25 | 2020-12-10 | 308 | 0d | Project Manager | 96h | 21,340.8 |
| 312 | 4.7.3.2 | · Software design & code | 12d | 2020-12-11 | 2020-12-28 | 311 | 0d | Programmer 1 | 96h | 15,684.48 |
| 313 | 4.7.4 | **Web client: Provide advanced GUI to implement user menus & login form for UI client app. Phase III** | 24d | 2020-12-29 | 2021-01-29 |  | 0d |  | 384h | 65,610.24 |
| 314 | 4.7.4.1 | · User navigation requirements analysis | 12d | 2020-12-29 | 2021-01-13 | 311, 312 | 0d | UI Designer 1; Project Manager | 192h | 35,633.28 |
| 315 | 4.7.4.2 | · UI design & scripting | 12d | 2021-01-14 | 2021-01-29 | 314 | 0d | UI Designer 1; Programmer 2 | 192h | 29,976.96 |
| 316 | 4.8 | **Phase III Delivery Activities** | 284d | 2020-06-26 | 2021-07-28 |  | 0d |  | 2528h | 413,891.2 |
| 317 | 4.8.1 | **Phase III Integration Test** | 30d | 2021-02-01 | 2021-03-12 |  | 0d |  | 768h | 112,819.68 |
| 318 | 4.8.1.1 | · Integration test of Phase III software components | 12d | 2021-02-01 | 2021-02-16 | 266, 269, 272, 276, 279, 282, 286, 289, 292, 296, 299, 302, 306, 309, 312, 315 | 0d | Software Tester 1; Project Manager; Database Analyst 1 | 288h | 38,467.2 |
| 319 | 4.8.1.2 | · Redesign and rework following integration tests | 12d | 2021-02-17 | 2021-03-04 | 318 | 0d | Project Manager; Database Administrator; Programmer 1; System Analyst | 384h | 57,309.12 |
| 320 | 4.8.1.3 | · Phase I & II software documentation and acceptance test | 6d | 2021-03-05 | 2021-03-12 | 319 | 0d | Project Manager; Documentation Specialist | 96h | 17,043.36 |
| 321 | 4.8.2 | **Phase III Change Management** | 202d | 2020-06-26 | 2021-04-05 |  | 0d |  | 512h | 93,306.4 |
| 322 | 4.8.2.1 | · Business process change | 4d | 2020-06-26 | 2020-07-15 | 262 | 188d | Project Manager; Business Analyst 1 | 32h | 6,027.2 |
| 323 | 4.8.2.2 | · Training on new work procedures | 12d | 2020-06-26 | 2020-07-13 | 262 | 190d | Project Manager; Documentation Specialist | 128h | 22,724.48 |
| 324 | 4.8.2.3 | · Update standard operating procedures | 4d | 2020-07-08 | 2020-07-17 | 262 | 186d | Project Manager; Documentation Specialist | 32h | 5,681.12 |
| 325 | 4.8.2.4 | · User training/train the trainer sessions | 8d | 2021-03-15 | 2021-03-24 | 262, 320 | 8d | Project Manager; Business Analyst 1 | 128h | 24,108.8 |
| 326 | 4.8.2.5 | · Set up and train support team (first-level and second-level) | 16d | 2021-03-15 | 2021-04-05 | 262, 320 | 0d | Project Manager; System Analyst; Business Analyst 1 | 192h | 34,764.8 |
| 327 | 4.8.3 | **Process and System Evaluation** | 30d | 2021-04-06 | 2021-05-17 |  | 0d |  | 672h | 85,077.12 |
| 328 | 4.8.3.1 | · Systems installation | 12d | 2021-04-06 | 2021-04-21 | 320, 322, 323, 324, 325, 326 | 0d | Programmer 2; Database Administrator; Database Analyst 1 | 288h | 33,885.12 |
| 329 | 4.8.3.2 | · Pilot test | 12d | 2021-04-22 | 2021-05-07 | 328 | 0d | Software Tester 1; Database Analyst 1; System Analyst | 288h | 33,110.4 |
| 330 | 4.8.3.3 | · User evaluation/feedback | 6d | 2021-05-10 | 2021-05-17 | 329 | 0d | Project Manager; Business Analyst 1 | 96h | 18,081.6 |

| ID | WBS | Task | Duration | Start | Finish | Predecessors | Total slack | Resources | Work | Cost |
| --- | --- | --- | --- | --- | --- | --- | --- | --- | --- | --- |
| 331 | 4.8.4 | **Project Review (Stagegate)** | 36d | 2021-05-18 | 2021-07-06 |  | 0d |  | 384h | 80,006.4 |
| 332 | 4.8.4.1 | Stagegate review for the final system | 12d | 2021-05-18 | 2021-06-02 | 330 | 0d | Project Manager; System Analyst | 192h | 37,324.8 |
| 333 | 4.8.4.2 | Remediation of client issues | 12d | 2021-06-03 | 2021-06-18 | 332 | 0d | Project Manager | 96h | 21,340.8 |
| 334 | 4.8.4.3 | Client approval and signoff for final system | 12d | 2021-06-21 | 2021-07-06 | 333 | 12d | Project Manager | 96h | 21,340.8 |
| 335 | 4.8.5 | **Project Closure** | 70d | 2021-04-22 | 2021-07-28 |  | 0d |  | 192h | 42,681.6 |
| 336 | 4.8.5.1 | Procurement close | 8d | 2021-04-22 | 2021-05-03 | 328 | 58d | Project Manager | 64h | 14,227.2 |
| 337 | 4.8.5.2 | Obtain formal acceptance | 12d | 2021-07-07 | 2021-07-22 | 333 | 0d | Project Manager | 96h | 21,340.8 |
| 338 | 4.8.5.3 | Release resources | 4d | 2021-07-23 | 2021-07-28 | 334, 336, 337 | 0d | Project Manager | 32h | 7,113.6 |
