# Assignment2-Kaea-Cola_ProjectPlan-Draft3Final

Schedule from MS Project, 2018-10-29 to 2022-10-19.

## Calendars

- Standard: Mon-Fri 08:00-12:00, 13:00-17:00; Sat-Sun off.

## Schedule

| ID | WBS | Task | Duration | Start | Finish | Predecessors | Total slack |
| --- | --- | --- | --- | --- | --- | --- | --- |
| 1 | 1 | **Pre-Development Activities** | 36d | 2018-10-29 | 2018-12-17 |  | 0d |
| 2 | 1.1 | Project Planning Kickoff | 1d | 2018-10-29 | 2018-10-29 |  | 0d |
| 3 | 1.2 | **Perform Business Analysis** | 5d | 2018-10-30 | 2018-11-05 |  | 0d |
| 4 | 1.2.1 | Business Analysis Group 1 Observation and Meetings | 3d | 2018-10-30 | 2018-11-01 | 2 | 0d |
| 5 | 1.2.2 | Business Analysis Group 2 Observation and Meetings | 3d | 2018-10-30 | 2018-11-01 | 2 | 0d |
| 6 | 1.2.3 | Business Analysis Group 3 Observation and Meetings | 2d | 2018-10-30 | 2018-10-31 | 2 | 1d |
| 7 | 1.2.4 | Business Analysis Group 4 Observation and Meetings | 2d | 2018-10-30 | 2018-10-31 | 2 | 1d |
| 8 | 1.2.5 | Business Analysis Group 5 Observation and Meetings | 1.5d | 2018-10-30 | 2018-10-31 | 2 | 1.5d |
| 9 | 1.2.6 | Business Analysis Checkin Meeting | 1d | 2018-11-01 | 2018-11-01 | 2FS+2d | 0d |
| 10 | 1.2.7 | Business Analysis Wrapup Meeting | 2d | 2018-11-02 | 2018-11-05 | 4, 5, 6, 7, 8, 9 | 0d |
| 11 | 1.3 | **Investigate Stakeholder Requirements** | 8d | 2018-11-06 | 2018-11-15 |  | 0d |
| 12 | 1.3.1 | Management and Reporting - Conduct application design workshop #1 | 2d | 2018-11-06 | 2018-11-07 | 10 | 0d |
| 13 | 1.3.2 | Sales - Conduct application design workshop | 1d | 2018-11-08 | 2018-11-08 | 12 | 1d |
| 14 | 1.3.3 | Marketing and Development - Conduct application design workshop | 1d | 2018-11-08 | 2018-11-08 | 12 | 1d |
| 15 | 1.3.4 | Manufacturing - Conduct application design workshop | 1d | 2018-11-08 | 2018-11-08 | 12 | 1d |
| 16 | 1.3.5 | Customer and Vendor Relations - Conduct application design workshop | 1d | 2018-11-08 | 2018-11-08 | 12 | 1d |
| 17 | 1.3.6 | Purchasing and Inventory Management - Conduct application design workshop | 1.5d | 2018-11-08 | 2018-11-09 | 12 | 0.5d |
| 18 | 1.3.7 | Accounting - Conduct application design workshop | 1.5d | 2018-11-08 | 2018-11-09 | 12 | 0.5d |
| 19 | 1.3.8 | Management and Reporting - Conduct application design workshop #2 | 2d | 2018-11-08 | 2018-11-09 | 12 | 0d |
| 20 | 1.3.9 | System Administration - Conduct application design workshop | 1d | 2018-11-12 | 2018-11-12 | 13, 14, 15, 16, 17, 18, 19 | 0d |
| 21 | 1.3.10 | Analyze system user requirements gathered from application design workshops | 3d | 2018-11-13 | 2018-11-15 | 20 | 0d |
| 22 | 1.4 | **Perform feasibility study:** | 3d | 2018-11-16 | 2018-11-20 |  | 0d |
| 23 | 1.4.1 | Analyze the system configuration requirements for scale and interoperability/portability. | 3d | 2018-11-16 | 2018-11-20 | 21 | 0d |
| 24 | 1.4.2 | Perform a technology trawl to identify hardware and software required to deliver the system | 3d | 2018-11-16 | 2018-11-20 | 21 | 0d |
| 25 | 1.4.3 | Research and identify services that we might contract with to perform currency tracking | 3d | 2018-11-16 | 2018-11-20 | 21 | 0d |
| 26 | 1.4.4 | Research and identify services that we might contract with to perform fax-to-email | 2d | 2018-11-16 | 2018-11-19 | 21 | 1d |
| 27 | 1.4.5 | Research and identify RFID and barcode labeling requirements and suppliers | 3d | 2018-11-16 | 2018-11-20 | 21 | 0d |

| ID | WBS | Task | Duration | Start | Finish | Predecessors | Total slack | Free slack |
| --- | --- | --- | --- | --- | --- | --- | --- | --- |
| 28 | 1.5 | **Project planning:** | 19d | 2018-11-21 | 2018-12-17 |  | 0d |  |
| 29 | 1.5.1 | Revisit system requirements, integrating input from the stakeholder analysis and the feasibility study | 4d | 2018-11-21 | 2018-11-26 | 23, 24, 25, 26, 27 | 0d |  |
| 30 | 1.5.2 | Discuss and agree upon plan scope with key stakeholders | 3d | 2018-11-27 | 2018-11-29 | 29 | 0d |  |
| 31 | 1.5.3 | Rearrange interim deliverables, to reflect what we've learned | 1d | 2018-11-30 | 2018-11-30 | 30 | 0d |  |
| 32 | 1.5.4 | Revise the project plan, resource plan, effort, time and budget estimates and project schedule | 5d | 2018-12-03 | 2018-12-07 | 31 | 0d |  |
| 33 | 1.5.5 | Review and agree estimate and timescale changes with upper management | 5d | 2018-12-10 | 2018-12-14 | 32 | 26d | 0d |
| 34 | 1.5.6 | Revise project plans to accommodate any revisions to scope | 1d | 2018-12-17 | 2018-12-17 | 33 | 26d | 0d |
| 35 | 2 | **Phase I: Develop Basic Integrated Business Management System** | 176d | 2018-12-10 | 2019-08-12 |  | 0d |  |
| 36 | 2.1 | Phase 1 Kickoff Meeting | 2d | 2018-12-10 | 2018-12-11 | 32 | 0d |  |
| 37 | 2.2 | **Develop Initial System Management Subsystem** | 74d | 2018-12-12 | 2019-03-25 |  | 0d |  |
| 38 | 2.2.1 | **DBMS: Install & Configure DBMS Engine & SQL Interface** | 18d | 2018-12-12 | 2019-01-04 |  | 14d |  |
| 39 | 2.2.1.1 | · Installing hardware server | 8d | 2018-12-12 | 2018-12-21 | 36 | 14d | 0d |
| 40 | 2.2.1.2 | · TestNetwork connections | 2d | 2018-12-24 | 2018-12-25 | 39 | 14d | 0d |
| 41 | 2.2.1.3 | · Install & Configure DBMS engine | 2d | 2018-12-26 | 2018-12-27 | 40 | 14d | 0d |
| 42 | 2.2.1.4 | · Install and test SQL interface software | 4d | 2018-12-28 | 2019-01-02 | 41 | 14d | 0d |
| 43 | 2.2.1.5 | · Evaluate the system | 2d | 2019-01-03 | 2019-01-04 | 42 | 14d | 0d |
| 44 | 2.2.2 | **DBMS: User Accounts and Permissions** | 20d | 2018-12-18 | 2019-01-14 |  | 14d |  |
| 45 | 2.2.2.1 | · Design database | 2d | 2018-12-18 | 2018-12-19 | 36, 34 | 26d | 12d |
| 46 | 2.2.2.2 | · Implement and test database structure | 3d | 2019-01-07 | 2019-01-09 | 43, 45 | 14d | 0d |
| 47 | 2.2.2.3 | · Test accounts | 3d | 2019-01-10 | 2019-01-14 | 46 | 14d | 0d |
| 48 | 2.2.3 | **Server App: System management and security application** | 24d | 2019-01-15 | 2019-02-15 |  | 14d |  |
| 49 | 2.2.3.1 | · Software requirements analysis | 8d | 2019-01-15 | 2019-01-24 | 47 | 14d | 0d |
| 50 | 2.2.3.2 | ·Software design | 8d | 2019-01-25 | 2019-02-05 | 49 | 14d | 0d |
| 51 | 2.2.3.3 | · Development & coding | 4d | 2019-02-06 | 2019-02-11 | 50 | 14d | 0d |
| 52 | 2.2.3.4 | · Module documentation and acceptance test | 4d | 2019-02-12 | 2019-02-15 | 51 | 14d |  |

| ID | WBS | Task | Duration | Start | Finish | Predecessors | Total slack | Free slack |
| --- | --- | --- | --- | --- | --- | --- | --- | --- |
| 53 | 2.2.4 | **Client App: System management application** | 26d | 2018-12-12 | 2019-01-16 |  | 0d |  |
| 54 | 2.2.4.1 | · Software requirements analysis | 8d | 2018-12-12 | 2018-12-21 | 36 | 0d |  |
| 55 | 2.2.4.2 | · Software design & code | 9d | 2018-12-24 | 2019-01-03 | 54 | 0d |  |
| 56 | 2.2.4.3 | · Module documentation and acceptance test | 9d | 2019-01-04 | 2019-01-16 | 55 | 0d |  |
| 57 | 2.2.5 | **Integrated User Interface: Provide integrated GUI to implement basic access stubs for all client apps. In Phase 1** | 48d | 2019-01-17 | 2019-03-25 |  | 0d |  |
| 58 | 2.2.5.1 | · User navigation requirements analysis | 12d | 2019-01-17 | 2019-02-01 | 56 | 0d |  |
| 59 | 2.2.5.2 | · UI design & scripting | 12d | 2019-02-04 | 2019-02-19 | 58 | 0d |  |
| 60 | 2.2.5.3 | · UI documentation and acceptance test | 12d | 2019-02-20 | 2019-03-07 | 59 | 0d |  |
| 61 | 2.2.5.4 | · Subsystem/component integration test & documentation | 12d | 2019-03-08 | 2019-03-25 | 47, 52, 56, 60 | 0d |  |
| 62 | 2.3 | **Develop Order Processing & Invoicing subsystem** | 39d | 2018-12-12 | 2019-02-04 |  | 35d |  |
| 63 | 2.3.1 | **DBMS: Orders & Invoicing Database – Full implementation** | 4d | 2018-12-12 | 2018-12-17 |  | 35d |  |
| 64 | 2.3.1.1 | · Design database | 2d | 2018-12-12 | 2018-12-13 | 36 | 35d | 0d |
| 65 | 2.3.1.2 | · Implement and test database structures | 2d | 2018-12-14 | 2018-12-17 | 64 | 35d | 0d |
| 66 | 2.3.2 | **Server App: Billing/Invoicing** | 12d | 2018-12-12 | 2018-12-27 |  | 35d |  |
| 67 | 2.3.2.1 | · Software requirements analysis | 4d | 2018-12-12 | 2018-12-17 | 36 | 35d | 0d |
| 68 | 2.3.2.2 | · Software design & code | 4d | 2018-12-18 | 2018-12-21 | 65, 67 | 35d | 0d |
| 69 | 2.3.2.3 | · Module documentation and acceptance test | 4d | 2018-12-24 | 2018-12-27 | 68 | 35d | 0d |
| 70 | 2.3.3 | **Client App: Sales** | 39d | 2018-12-12 | 2019-02-04 |  | 35d |  |
| 71 | 2.3.3.1 | · Software requirements analysis | 8d | 2018-12-12 | 2018-12-21 | 36 | 39d | 4d |
| 72 | 2.3.3.2 | · Software design & code | 3d | 2018-12-28 | 2019-01-01 | 69, 71 | 35d | 0d |
| 73 | 2.3.3.3 | · Module documentation and acceptance test | 12d | 2019-01-02 | 2019-01-17 | 72 | 35d | 0d |
| 74 | 2.3.3.4 | · Subsystem/component integration test & documentation | 12d | 2019-01-18 | 2019-02-04 | 73 | 35d |  |
| 75 | 2.4 | **Develop Billing/Accounting subsystem** | 29d | 2018-12-12 | 2019-01-21 |  | 45d |  |
| 76 | 2.4.1 | **DBMS: Budgeting and Accounting** | 6d | 2018-12-12 | 2018-12-19 |  | 47d |  |
| 77 | 2.4.1.1 | · Design database | 3d | 2018-12-12 | 2018-12-14 | 36 | 47d | 0d |
| 78 | 2.4.1.2 | · Implement and test database structures | 3d | 2018-12-17 | 2018-12-19 | 77 | 47d | 2d |

| ID | WBS | Task | Duration | Start | Finish | Predecessors | Total slack | Free slack |
| --- | --- | --- | --- | --- | --- | --- | --- | --- |
| 79 | 2.4.2 | **Server App: Billing/Invoicing** | 21d | 2018-12-12 | 2019-01-09 |  | 45d |  |
| 80 | 2.4.2.1 | · Software requirements analysis | 8d | 2018-12-12 | 2018-12-21 | 36 | 45d | 0d |
| 81 | 2.4.2.2 | · Software design & code | 3d | 2018-12-24 | 2018-12-26 | 78, 80 | 45d | 0d |
| 82 | 2.4.2.3 | · Unit test | 5d | 2018-12-27 | 2019-01-02 | 81 | 45d | 0d |
| 83 | 2.4.2.4 | · Module documentation and acceptance test | 5d | 2019-01-03 | 2019-01-09 | 82 | 45d | 0d |
| 84 | 2.4.3 | **Client App: Accounting** | 29d | 2018-12-12 | 2019-01-21 |  | 45d |  |
| 85 | 2.4.3.1 | · Software requirements analysis | 8d | 2018-12-12 | 2018-12-21 | 36 | 50d | 0d |
| 86 | 2.4.3.2 | · Software design & code | 8d | 2018-12-24 | 2019-01-02 | 85 | 50d | 5d |
| 87 | 2.4.3.3 | · Module documentation and acceptance test | 8d | 2019-01-10 | 2019-01-21 | 83, 86 | 45d |  |
| 88 | 2.5 | **Develop Inventory management subsystem** | 43d | 2018-12-12 | 2019-02-08 |  | 31d |  |
| 89 | 2.5.1 | **DBMS: Resources & Inventory Database** | 6d | 2018-12-12 | 2018-12-19 |  | 36d |  |
| 90 | 2.5.1.1 | · Design database | 3d | 2018-12-12 | 2018-12-14 | 36 | 36d | 0d |
| 91 | 2.5.1.2 | · Implement and test database structures | 3d | 2018-12-17 | 2018-12-19 | 90 | 36d | 5d |
| 92 | 2.5.2 | **Server App: Purchasing & Inventory Management** | 35d | 2018-12-12 | 2019-01-29 |  | 31d |  |
| 93 | 2.5.2.1 | · Software requirements analysis | 8d | 2018-12-12 | 2018-12-21 | 36 | 31d | 0d |
| 94 | 2.5.2.2 | · Software design & code | 3d | 2018-12-24 | 2018-12-26 | 93 | 31d | 0d |
| 95 | 2.5.2.3 | · Module documentation and acceptance test | 12d | 2018-12-27 | 2019-01-11 | 91, 94 | 31d | 0d |
| 96 | 2.5.2.4 | · Subsystem/component integration test & documentation | 12d | 2019-01-14 | 2019-01-29 | 95 | 31d | 0d |
| 97 | 2.5.3 | **Client App: Inventory Management** | 43d | 2018-12-12 | 2019-02-08 |  | 31d |  |
| 98 | 2.5.3.1 | · Software requirements analysis | 10d | 2018-12-12 | 2018-12-25 | 36 | 48d | 0d |
| 99 | 2.5.3.2 | · Software design & code | 8d | 2018-12-26 | 2019-01-04 | 98 | 48d | 17d |
| 100 | 2.5.3.3 | · Module documentation and acceptance test | 8d | 2019-01-30 | 2019-02-08 | 96, 99 | 31d | 0d |
| 101 | 2.6 | **Develop System Management Subsystem (advanced functions)** | 129d | 2018-12-12 | 2019-06-10 |  | 0d |  |
| 102 | 2.6.1 | **DBMS: Logging & Audit Trail for Phase I functions.** | 24d | 2019-03-26 | 2019-04-26 |  | 0d |  |
| 103 | 2.6.1.1 | · Design database | 12d | 2019-03-26 | 2019-04-10 | 61, 74, 87, 100 | 0d |  |
| 104 | 2.6.1.2 | · Implement and test database structures | 12d | 2019-04-11 | 2019-04-26 | 103 | 0d |  |

| ID | WBS | Task | Duration | Start | Finish | Predecessors | Total slack | Free slack |
| --- | --- | --- | --- | --- | --- | --- | --- | --- |
| 105 | 2.6.2 | **GUI & front-end menu implementation** | 129d | 2018-12-12 | 2019-06-10 |  | 0d |  |
| 106 | 2.6.2.1 | **Client App: Integrated user-navigation/access** | 122d | 2018-12-12 | 2019-05-30 |  | 0d |  |
| 107 | 2.6.2.1.1 | **· Software requirements analysis** | 24d | 2018-12-12 | 2019-01-14 |  | 62d |  |
| 108 | 2.6.2.1.1.1 | · Requirment gathering | 14d | 2018-12-12 | 2018-12-31 | 36 | 62d | 0d |
| 109 | 2.6.2.1.1.2 | · Requirment analysis phase | 10d | 2019-01-01 | 2019-01-14 | 108 | 62d | 0d |
| 110 | 2.6.2.1.2 | · Software design & code | 12d | 2019-01-15 | 2019-01-30 | 109 | 62d |  |
| 111 | 2.6.2.1.3 | · Module documentation and acceptance test | 12d | 2019-04-29 | 2019-05-14 | 104, 110 | 0d |  |
| 112 | 2.6.2.1.4 | · Subsystem/component integration test & documentation | 12d | 2019-05-15 | 2019-05-30 | 111 | 0d |  |
| 113 | 2.6.2.2 | **Client App: Provide advanced GUI to implement user menus and login form for UI client app.** | 86d | 2019-02-11 | 2019-06-10 |  | 0d |  |
| 114 | 2.6.2.2.1 | · User navigation requirements analysis | 8d | 2019-02-11 | 2019-02-20 | 100 | 55d | 0d |
| 115 | 2.6.2.2.2 | · UI design & scripting | 9d | 2019-02-21 | 2019-03-05 | 114 | 55d | 0d |
| 116 | 2.6.2.2.3 | · GUI unit tests | 7d | 2019-03-06 | 2019-03-14 | 115 | 55d |  |
| 117 | 2.6.2.2.4 | · UI documentation and acceptance test | 7d | 2019-05-31 | 2019-06-10 | 112, 116 | 0d |  |
| 118 | 2.7 | **Phase I Delivery Activities** | 45d | 2019-06-11 | 2019-08-12 |  | 0d |  |
| 119 | 2.7.1 | **Phase I Integration Test** | 12d | 2019-06-11 | 2019-06-26 |  | 0d |  |
| 120 | 2.7.1.1 | **· Integration test of Phase I software components** | 12d | 2019-06-11 | 2019-06-26 |  | 0d |  |
| 121 | 2.7.1.1.1 | · Redesign and rework following integration tests | 6d | 2019-06-11 | 2019-06-18 | 117 | 0d |  |
| 122 | 2.7.1.1.2 | · Phase I software documentation and acceptance test | 6d | 2019-06-19 | 2019-06-26 | 121 | 0d |  |
| 123 | 2.7.2 | **Phase IChange management** | 8d | 2019-06-27 | 2019-07-08 |  | 0d |  |
| 124 | 2.7.2.1 | · Training on new work procedures | 4d | 2019-06-27 | 2019-07-02 | 122 | 0d |  |
| 125 | 2.7.2.2 | · Business process changes | 2d | 2019-07-03 | 2019-07-04 | 124 | 0d |  |
| 126 | 2.7.2.3 | · User system training | 2d | 2019-07-05 | 2019-07-08 | 125 | 0d |  |
| 127 | 2.7.3 | **New process & systems evaluation** | 17d | 2019-07-09 | 2019-07-31 |  | 0d |  |
| 128 | 2.7.3.1 | · Phase I systems installation | 7d | 2019-07-09 | 2019-07-17 | 126 | 0d |  |
| 129 | 2.7.3.2 | · Phase I Testing | 6d | 2019-07-18 | 2019-07-25 | 128 | 0d |  |
| 130 | 2.7.3.3 | · Phase ISystem Documentation | 2d | 2019-07-26 | 2019-07-29 | 129 | 0d |  |
| 131 | 2.7.3.4 | · Phase I User evaluation | 1d | 2019-07-30 | 2019-07-30 | 130 | 0d |  |
| 132 | 2.7.3.5 | · Evaluatethefeedback | 1d | 2019-07-31 | 2019-07-31 | 131 | 0d |  |

| ID | WBS | Task | Duration | Start | Finish | Predecessors | Total slack | Free slack |
| --- | --- | --- | --- | --- | --- | --- | --- | --- |
| 133 | 2.7.4 | **Project Review** | 8d | 2019-08-01 | 2019-08-12 |  | 0d |  |
| 134 | 2.7.4.1 | · Project plan review for Phase I | 4d | 2019-08-01 | 2019-08-06 | 132 | 0d |  |
| 135 | 2.7.4.2 | · Management approval and signoff for Phase I | 4d | 2019-08-07 | 2019-08-12 | 134 | 0d |  |
| 136 | 3 | **Phase II: Develop Advanced Integrated Business Management System** | 256d | 2019-08-01 | 2020-07-23 |  | 1d |  |
| 137 | 3.1 | Phase 2 Kickoff Meeting | 2d | 2019-08-01 | 2019-08-02 | 132 | 1d | 0d |
| 138 | 3.2 | **Phase 1 follow up** | 16d | 2019-08-05 | 2019-08-26 |  | 0d |  |
| 139 | 3.2.1 | Review Phase I software components | 5d | 2019-08-05 | 2019-08-09 | 137 | 1d |  |
| 140 | 3.2.2 | Review Phase I hardware components | 5d | 2019-08-05 | 2019-08-09 | 137 | 11d |  |
| 141 | 3.2.3 | Upgrade the software requirements | 10d | 2019-08-13 | 2019-08-26 | 139, 135 | 0d |  |
| 142 | 3.3 | **Upgrade System Management Subsystem (Basic)** | 36d | 2019-08-27 | 2019-10-15 |  | 0d |  |
| 143 | 3.3.1 | **Server App: Upgraded system management and security management** | 36d | 2019-08-27 | 2019-10-15 |  | 0d |  |
| 144 | 3.3.1.1 | **- Software requirements analysis** | 14d | 2019-08-27 | 2019-09-13 |  | 0d |  |
| 145 | 3.3.1.1.1 | -Requirements Scope | 2d | 2019-08-27 | 2019-08-28 | 140, 141 | 0d |  |
| 146 | 3.3.1.1.2 | -Stakeholder Identification | 2d | 2019-08-29 | 2019-08-30 | 145 | 0d |  |
| 147 | 3.3.1.1.3 | -Requirements Elicitation and Analysis | 5d | 2019-09-02 | 2019-09-06 | 146 | 0d |  |
| 148 | 3.3.1.1.4 | -Software requirement specification and Management | 5d | 2019-09-09 | 2019-09-13 | 147 | 0d |  |
| 149 | 3.3.1.2 | - Software design | 5d | 2019-09-16 | 2019-09-20 | 148 | 0d |  |
| 150 | 3.3.1.3 | - Software code | 5d | 2019-09-23 | 2019-09-27 | 149 | 0d |  |
| 151 | 3.3.1.4 | - Module documentation and acceptance test | 12d | 2019-09-30 | 2019-10-15 | 150 | 0d |  |
| 152 | 3.3.2 | **Client App: System management and security integration** | 36d | 2019-08-27 | 2019-10-15 |  | 0d |  |
| 153 | 3.3.2.1 | **- Software requirements analysis** | 14d | 2019-08-27 | 2019-09-13 |  | 0d |  |
| 154 | 3.3.2.1.1 | -Requirements Scope | 2d | 2019-08-27 | 2019-08-28 | 140, 141 | 0d |  |
| 155 | 3.3.2.1.2 | -Stakeholder Identification | 2d | 2019-08-29 | 2019-08-30 | 154 | 0d |  |
| 156 | 3.3.2.1.3 | -Requirements Elicitation and Analysis | 5d | 2019-09-02 | 2019-09-06 | 155 | 0d |  |
| 157 | 3.3.2.1.4 | -Software requirement specification and Management | 5d | 2019-09-09 | 2019-09-13 | 156 | 0d |  |
| 158 | 3.3.2.2 | - Software design | 5d | 2019-09-16 | 2019-09-20 | 157 | 0d |  |
| 159 | 3.3.2.3 | - Software code | 5d | 2019-09-23 | 2019-09-27 | 158 | 0d |  |
| 160 | 3.3.2.4 | -Module documentation and acceptance | 12d | 2019-09-30 | 2019-10-15 | 159 | 0d |  |

| ID | WBS | Task | Duration | Start | Finish | Predecessors | Total slack |
| --- | --- | --- | --- | --- | --- | --- | --- |
| 161 | 3.4 | **Develop Operations Management & Reporting subsystem** | 72d | 2019-08-27 | 2019-12-04 |  | 0d |
| 162 | 3.4.1 | **DBMS: Sales and Market** | 21d | 2019-10-16 | 2019-11-13 |  | 0d |
| 163 | 3.4.1.1 | - Design database by creating tables, developing packages and integrating with the server application | 10d | 2019-10-16 | 2019-10-29 | 150, 151, 160 | 0d |
| 164 | 3.4.1.2 | - Implement and test database structures | 6d | 2019-10-30 | 2019-11-06 | 163 | 0d |
| 165 | 3.4.1.3 | - Gather information regarding previous sales and market demands. | 5d | 2019-11-07 | 2019-11-13 | 163, 164 | 0d |
| 166 | 3.4.2 | **Server App: Sales Analysis and Reporting** | 60d | 2019-08-27 | 2019-11-18 |  | 0d |
| 167 | 3.4.2.1 | - Software requirements analysis | 5d | 2019-08-27 | 2019-09-02 | 141 | 52d |
| 168 | 3.4.2.2 | **- Software design & code** | 1d | 2019-11-14 | 2019-11-14 | 165 | 0d |
| 169 | 3.4.2.2.1 | - Write a program to display the analysis using charts and graphs for easy understanding. | 1d | 2019-11-14 | 2019-11-14 | 167 | 0d |
| 170 | 3.4.2.3 | - Module documentation and acceptance test | 2d | 2019-11-15 | 2019-11-18 | 169 | 0d |
| 171 | 3.4.3 | **Client App: Management and Reporting** | 12d | 2019-11-19 | 2019-12-04 |  | 0d |
| 172 | 3.4.3.1 | - Software requirements analysis | 5d | 2019-11-19 | 2019-11-25 | 170 | 0d |
| 173 | 3.4.3.2 | **- Software design & code** | 5d | 2019-11-26 | 2019-12-02 |  | 0d |
| 174 | 3.4.3.2.1 | - Develop a user friendly UI that shows the graph and charts of sales against time duration and scale. | 1d | 2019-11-26 | 2019-11-26 | 172 | 0d |
| 175 | 3.4.3.2.2 | - Application used to report | 2d | 2019-11-27 | 2019-11-28 | 174 | 0d |
| 176 | 3.4.3.2.3 | - Develop the GUI | 1d | 2019-11-29 | 2019-11-29 | 175 | 0d |
| 177 | 3.4.3.2.4 | - Unit testing of GUI | 1d | 2019-12-02 | 2019-12-02 | 176 | 0d |
| 178 | 3.4.3.3 | - Module documentation and acceptance test | 2d | 2019-12-03 | 2019-12-04 | 177 | 0d |
| 179 | 3.5 | **Develop Forecasting and Analysis subsystem** | 26d | 2019-12-05 | 2020-01-09 |  | 0d |
| 180 | 3.5.1 | **DBMS: Update Sales and Market Database – add forecasting & analysis table** | 2d | 2019-12-05 | 2019-12-06 |  | 12d |
| 181 | 3.5.1.1 | - Implement and test database structures | 2d | 2019-12-05 | 2019-12-06 | 178 | 12d |
| 182 | 3.5.2 | **Server App: Demand Forecasting** | 26d | 2019-12-05 | 2020-01-09 |  | 0d |
| 183 | 3.5.2.1 | **- Software requirements analysis** | 14d | 2019-12-05 | 2019-12-24 |  | 0d |
| 184 | 3.5.2.1.1 | -Requirements Scope | 2d | 2019-12-05 | 2019-12-06 | 178 | 0d |
| 185 | 3.5.2.1.2 | -Stakeholder Identification | 2d | 2019-12-09 | 2019-12-10 | 184 | 0d |
| 186 | 3.5.2.1.3 | -Requirements Elicitation and Analysis | 5d | 2019-12-11 | 2019-12-17 | 185 | 0d |
| 187 | 3.5.2.1.4 | -Software requirement specification and Management | 5d | 2019-12-18 | 2019-12-24 | 186 | 0d |
| 188 | 3.5.2.2 | - Software design | 5d | 2019-12-25 | 2019-12-31 | 181, 187 | 0d |
| 189 | 3.5.2.3 | - Software code | 5d | 2020-01-01 | 2020-01-07 | 188 | 0d |
| 190 | 3.5.2.4 | - Module documentation and acceptance test | 2d | 2020-01-08 | 2020-01-09 | 189 | 0d |

| ID | WBS | Task | Duration | Start | Finish | Predecessors | Total slack |
| --- | --- | --- | --- | --- | --- | --- | --- |
| 191 | 3.6 | **Develop Product code database and Lookup subsystem** | 38d | 2020-01-10 | 2020-03-03 |  | 0d |
| 192 | 3.6.1 | **DBMS: Product Management (only product code-related tables)** | 12d | 2020-01-10 | 2020-01-27 |  | 0d |
| 193 | 3.6.1.1 | - Design database by creating tables, developing packages and integrating with the server application | 8d | 2020-01-10 | 2020-01-21 | 190 | 0d |
| 194 | 3.6.1.2 | - Implement and test database structures | 4d | 2020-01-22 | 2020-01-27 | 193 | 0d |
| 195 | 3.6.2 | **Server App: Marketing and Development (functions related to product code)** | 7d | 2020-01-28 | 2020-02-05 |  | 0d |
| 196 | 3.6.2.1 | - Software requirements analysis | 3d | 2020-01-28 | 2020-01-30 | 194 | 0d |
| 197 | 3.6.2.2 | - Software design & code | 2d | 2020-01-31 | 2020-02-03 | 196 | 0d |
| 198 | 3.6.2.3 | - Module documentation and acceptance test | 2d | 2020-02-04 | 2020-02-05 | 197 | 0d |
| 199 | 3.6.3 | **Client App: Marketing and Development Application (functions related to product code)** | 9d | 2020-02-06 | 2020-02-18 |  | 0d |
| 200 | 3.6.3.1 | - Software requirements analysis | 3d | 2020-02-06 | 2020-02-10 | 198 | 0d |
| 201 | 3.6.3.2 | - Software design & code | 4d | 2020-02-11 | 2020-02-14 | 200 | 0d |
| 202 | 3.6.3.3 | - Module documentation and acceptance test | 2d | 2020-02-17 | 2020-02-18 | 201 | 0d |
| 203 | 3.6.4 | **Service: Product code lookup service** | 10d | 2020-02-19 | 2020-03-03 |  | 0d |
| 204 | 3.6.4.1 | - Software requirements analysis | 3d | 2020-02-19 | 2020-02-21 | 202 | 0d |
| 205 | 3.6.4.2 | - Software design & code | 2d | 2020-02-24 | 2020-02-25 | 204 | 0d |
| 206 | 3.6.4.3 | - Integration testing | 2d | 2020-02-26 | 2020-02-27 | 205 | 0d |
| 207 | 3.6.4.4 | - Documentation and acceptance test | 3d | 2020-02-28 | 2020-03-03 | 206 | 0d |
| 208 | 3.7 | **Develop Currency prediction and Conversion subsystem** | 7d | 2020-03-04 | 2020-03-12 |  | 0d |
| 209 | 3.7.1 | **Server App: API to Vendor currency database** | 7d | 2020-03-04 | 2020-03-12 |  | 0d |
| 210 | 3.7.1.1 | - Software requirements analysis | 3d | 2020-03-04 | 2020-03-06 | 207 | 0d |
| 211 | 3.7.1.2 | - Software design & code | 2d | 2020-03-09 | 2020-03-10 | 210 | 0d |
| 212 | 3.7.1.3 | - Module documentation and acceptance test | 2d | 2020-03-11 | 2020-03-12 | 211 | 0d |
| 213 | 3.8 | **Upgrade System Management Subsystem (advanced functions)** | 18d | 2020-03-13 | 2020-04-07 |  | 0d |
| 214 | 3.8.1 | **DBMS: Logging & Audit Trail for Phase II functions.** | 6d | 2020-03-13 | 2020-03-20 |  | 0d |
| 215 | 3.8.1.1 | - Design database by creating tables, developing packages and integrating with the server application | 4d | 2020-03-13 | 2020-03-18 | 212 | 0d |
| 216 | 3.8.1.2 | - Implement and test database structures | 2d | 2020-03-19 | 2020-03-20 | 215 | 0d |

| ID | WBS | Task | Duration | Start | Finish | Predecessors | Total slack | Free slack |
| --- | --- | --- | --- | --- | --- | --- | --- | --- |
| 217 | 3.8.2 | **DBMS: Permissions for Phase II functions.** | 2d | 2020-03-23 | 2020-03-24 |  | 0d |  |
| 218 | 3.8.2.1 | - Update database | 1d | 2020-03-23 | 2020-03-23 | 216 | 0d |  |
| 219 | 3.8.2.2 | - Implement and test database structures | 1d | 2020-03-24 | 2020-03-24 | 218 | 0d |  |
| 220 | 3.8.3 | **Server App: Upgraded system management and security application for Phase II functions** | 4d | 2020-03-25 | 2020-03-30 |  | 0d |  |
| 221 | 3.8.3.1 | - Software requirements analysis | 2d | 2020-03-25 | 2020-03-26 | 219 | 0d |  |
| 222 | 3.8.3.2 | - Software design & code | 1d | 2020-03-27 | 2020-03-27 | 221 | 0d |  |
| 223 | 3.8.3.3 | - Module documentation and acceptance test | 1d | 2020-03-30 | 2020-03-30 | 222 | 0d |  |
| 224 | 3.8.4 | **Client App: user-navigation/access and reporting for Phase II Enhancements** | 3d | 2020-03-31 | 2020-04-02 |  | 0d |  |
| 225 | 3.8.4.1 | - Software requirements analysis | 1d | 2020-03-31 | 2020-03-31 | 223 | 0d |  |
| 226 | 3.8.4.2 | - Software design & code | 1d | 2020-04-01 | 2020-04-01 | 225 | 0d |  |
| 227 | 3.8.4.3 | - Module documentation and acceptance test | 1d | 2020-04-02 | 2020-04-02 | 226 | 0d |  |
| 228 | 3.8.5 | **Client app: Provide advanced GUI to implement user menus and login form for UI client app. (Phase II)** | 3d | 2020-04-03 | 2020-04-07 |  | 0d |  |
| 229 | 3.8.5.1 | - User navigation requirements analysis | 1d | 2020-04-03 | 2020-04-03 | 227 | 0d |  |
| 230 | 3.8.5.2 | - UI design & scripting | 1d | 2020-04-06 | 2020-04-06 | 229 | 0d |  |
| 231 | 3.8.5.3 | - UI documentation and acceptance test | 1d | 2020-04-07 | 2020-04-07 | 230 | 0d |  |
| 232 | 3.9 | **Develop Inventory management subsystem** | 14d | 2020-04-08 | 2020-04-27 |  | 0d |  |
| 233 | 3.9.1 | **DBMS: Resources & Inventory Database** | 14d | 2020-04-08 | 2020-04-27 |  | 0d |  |
| 234 | 3.9.1.1 | - Design database by creating tables and integrating with the server application | 10d | 2020-04-08 | 2020-04-21 | 231 | 0d |  |
| 235 | 3.9.1.2 | - Implement and test database structures | 4d | 2020-04-22 | 2020-04-27 | 234 | 0d |  |
| 236 | 3.9.2 | **Server App: Purchasing & Inventory Management** | 7d | 2020-04-08 | 2020-04-16 |  | 7d |  |
| 237 | 3.9.2.1 | - Software requirements analysis | 2d | 2020-04-08 | 2020-04-09 | 231 | 7d | 0d |
| 238 | 3.9.2.2 | - Software design & code | 3d | 2020-04-10 | 2020-04-14 | 237 | 7d | 0d |
| 239 | 3.9.2.3 | - Module documentation and acceptance test | 2d | 2020-04-15 | 2020-04-16 | 238 | 7d |  |
| 240 | 3.9.3 | **Client App: Inventory Management** | 5d | 2020-04-08 | 2020-04-14 |  | 9d |  |
| 241 | 3.9.3.1 | - Software requirements analysis | 2d | 2020-04-08 | 2020-04-09 | 231 | 9d | 0d |
| 242 | 3.9.3.2 | - Software design & code | 2d | 2020-04-10 | 2020-04-13 | 241 | 9d | 0d |
| 243 | 3.9.3.3 | - Module documentation and acceptance test | 1d | 2020-04-14 | 2020-04-14 | 242 | 9d |  |

| ID | WBS | Task | Duration | Start | Finish | Predecessors | Total slack | Free slack |
| --- | --- | --- | --- | --- | --- | --- | --- | --- |
| 244 | 3.10 | **Phase II Delivery Activities** | 63d | 2020-04-28 | 2020-07-23 |  | 0d |  |
| 245 | 3.10.1 | Integrate all the software components developed. | 4d | 2020-04-28 | 2020-05-01 | 235, 239, 243 | 0d |  |
| 246 | 3.10.2 | **Phase II Integration Test** | 26d | 2020-05-04 | 2020-06-08 |  | 0d |  |
| 247 | 3.10.2.1 | - Integration test of Phase II software components | 8d | 2020-05-04 | 2020-05-13 | 245 | 0d |  |
| 248 | 3.10.2.2 | - Redesign and rework following integration tests | 10d | 2020-05-14 | 2020-05-27 | 247 | 0d |  |
| 249 | 3.10.2.3 | - Phase I software documentation and acceptance test | 8d | 2020-05-28 | 2020-06-08 | 248 | 0d |  |
| 250 | 3.10.3 | **Phase II change management** | 3d | 2020-06-09 | 2020-06-11 |  | 0d |  |
| 251 | 3.10.3.1 | - Business process changes | 1d | 2020-06-09 | 2020-06-09 | 249 | 0d |  |
| 252 | 3.10.3.2 | - Training in new work procedures | 1d | 2020-06-10 | 2020-06-10 | 251 | 0d |  |
| 253 | 3.10.3.3 | - User system training | 1d | 2020-06-11 | 2020-06-11 | 252 | 0d |  |
| 254 | 3.10.4 | **New process & systems evaluation** | 20d | 2020-06-12 | 2020-07-09 |  | 0d |  |
| 255 | 3.10.4.1 | - Phase II systems installation | 8d | 2020-06-12 | 2020-06-23 | 253 | 0d |  |
| 256 | 3.10.4.2 | - Phase II pilot study | 8d | 2020-06-24 | 2020-07-03 | 255 | 0d |  |
| 257 | 3.10.4.3 | - Phase II user evaluation | 2d | 2020-07-06 | 2020-07-07 | 256 | 0d |  |
| 258 | 3.10.4.4 | - Evaluation feedback and client review | 2d | 2020-07-08 | 2020-07-09 | 257 | 0d |  |
| 259 | 3.10.5 | **Project Review (Stagegate)** | 10d | 2020-07-10 | 2020-07-23 |  | 18d |  |
| 260 | 3.10.5.1 | - Stagegate (project plan) review for Phase II | 2d | 2020-07-10 | 2020-07-13 | 258 | 18d | 0d |
| 261 | 3.10.5.2 | - Agreement of client issues to be remedied in Phase II | 4d | 2020-07-14 | 2020-07-17 | 260 | 18d | 0d |
| 262 | 3.10.5.3 | - Client approval and signoff for Phase II | 4d | 2020-07-20 | 2020-07-23 | 261 | 18d |  |
| 263 | 4 | **Phase III: Develop Integrated Business Management System** | 594d | 2020-07-10 | 2022-10-19 |  | 0d |  |
| 264 | 4.1 | Phase III Kickoff Meeting | 2d | 2020-07-10 | 2020-07-13 | 258 | 0d |  |
| 265 | 4.2 | **Follow up on Phase II activities** | 26d | 2020-07-14 | 2020-08-18 |  | 0d |  |
| 266 | 4.2.1 | · Review lessons learned from Phase 2 prototype and user evaluation | 8d | 2020-07-14 | 2020-07-23 | 264 | 0d |  |
| 267 | 4.2.2 | · Review software and hardware requirements | 10d | 2020-07-24 | 2020-08-06 | 266 | 0d |  |
| 268 | 4.2.3 | · Agree on changes to be made and assign tasks | 8d | 2020-08-07 | 2020-08-18 | 267 | 0d |  |

| ID | WBS | Task | Duration | Start | Finish | Predecessors | Total slack | Free slack |
| --- | --- | --- | --- | --- | --- | --- | --- | --- |
| 269 | 4.3 | **Upgrade System Management Subsystem (Basic)** | 48d | 2020-08-19 | 2020-10-23 |  | 0d |  |
| 270 | 4.3.1 | **Server App: Upgraded system management and security management** | 36d | 2020-08-19 | 2020-10-07 |  | 0d |  |
| 271 | 4.3.1.1 | · Software requirements analysis | 12d | 2020-08-19 | 2020-09-03 | 268, 262 | 0d |  |
| 272 | 4.3.1.2 | · Software design& code | 12d | 2020-09-04 | 2020-09-21 | 271 | 6d | 0d |
| 273 | 4.3.1.3 | · Module documentation and acceptance test | 12d | 2020-09-22 | 2020-10-07 | 272 | 6d | 0d |
| 274 | 4.3.2 | **Client App: System management and security integration** | 36d | 2020-09-04 | 2020-10-23 |  | 6d |  |
| 275 | 4.3.2.1 | · Software requirements analysis | 10d | 2020-09-04 | 2020-09-17 | 271 | 8d | 0d |
| 276 | 4.3.2.2 | · Software design& code | 12d | 2020-09-18 | 2020-10-05 | 275 | 8d | 2d |
| 277 | 4.3.2.3 | · Module documentation and acceptance test | 12d | 2020-10-08 | 2020-10-23 | 273, 276 | 6d |  |
| 278 | 4.3.3 | **Client app: Provide integrated GUI to implement basic access stubs for all client apps.In Phase II** | 32d | 2020-09-04 | 2020-10-19 |  | 0d |  |
| 279 | 4.3.3.1 | · User navigation requirements analysis | 10d | 2020-09-04 | 2020-09-17 | 271 | 0d |  |
| 280 | 4.3.3.2 | · UI design& scripting | 12d | 2020-09-18 | 2020-10-05 | 279 | 0d |  |
| 281 | 4.3.3.3 | · UI documentation and acceptance test | 10d | 2020-10-06 | 2020-10-19 | 280 | 0d |  |
| 282 | 4.4 | **Develop Product management subsystem** | 80d | 2020-10-20 | 2021-02-08 |  | 0d |  |
| 283 | 4.4.1 | **DBMS: Product management - continue development** | 22d | 2020-10-20 | 2020-11-18 |  | 0d |  |
| 284 | 4.4.1.1 | · Design additional tables | 10d | 2020-10-20 | 2020-11-02 | 281 | 0d |  |
| 285 | 4.4.1.2 | · Implement and test database structures | 12d | 2020-11-03 | 2020-11-18 | 277, 284 | 0d |  |
| 286 | 4.4.2 | **Server App: Update Marketing and Development Application** | 34d | 2020-11-19 | 2021-01-05 |  | 0d |  |
| 287 | 4.4.2.1 | · Software requirements analysis | 10d | 2020-11-19 | 2020-12-02 | 285 | 0d |  |
| 288 | 4.4.2.2 | · Software design& code | 12d | 2020-12-03 | 2020-12-18 | 287 | 0d |  |
| 289 | 4.4.2.3 | · Module documentation and acceptance test | 12d | 2020-12-21 | 2021-01-05 | 288 | 0d |  |
| 290 | 4.4.3 | **Client App: Update Marketing and Development Application** | 36d | 2020-12-21 | 2021-02-08 |  | 0d |  |
| 291 | 4.4.3.1 | · Software requirements analysis | 10d | 2020-12-21 | 2021-01-01 | 288 | 2d |  |
| 292 | 4.4.3.2 | · Software design& code | 12d | 2021-01-06 | 2021-01-21 | 289, 291 | 0d |  |
| 293 | 4.4.3.3 | · Module documentation and acceptance test | 12d | 2021-01-22 | 2021-02-08 | 292 | 0d |  |

| ID | WBS | Task | Duration | Start | Finish | Predecessors | Total slack | Free slack |
| --- | --- | --- | --- | --- | --- | --- | --- | --- |
| 294 | 4.5 | **Develop Customer and Vendor Relations subsystem** | 72d | 2021-02-09 | 2021-05-19 |  | 0d |  |
| 295 | 4.5.1 | **DBMS: Customer Relationship Management** | 24d | 2021-02-09 | 2021-03-12 |  | 0d |  |
| 296 | 4.5.1.1 | · Design database | 12d | 2021-02-09 | 2021-02-24 | 293 | 0d |  |
| 297 | 4.5.1.2 | · Implement and test database structures | 12d | 2021-02-25 | 2021-03-12 | 296 | 24d | 12d |
| 298 | 4.5.2 | **Server App: CRM& Vendor Relations** | 36d | 2021-02-25 | 2021-04-15 |  | 0d |  |
| 299 | 4.5.2.1 | · Software requirements analysis | 12d | 2021-02-25 | 2021-03-12 | 296 | 0d |  |
| 300 | 4.5.2.2 | · Software design& code | 12d | 2021-03-15 | 2021-03-30 | 299 | 0d |  |
| 301 | 4.5.2.3 | · Module documentation and acceptance test | 12d | 2021-03-31 | 2021-04-15 | 297, 300 | 12d |  |
| 302 | 4.5.3 | **Client App: Customer and Vendor Relations** | 36d | 2021-03-31 | 2021-05-19 |  | 0d |  |
| 303 | 4.5.3.1 | · Software requirements analysis | 12d | 2021-03-31 | 2021-04-15 | 300 | 0d |  |
| 304 | 4.5.3.2 | · Software design& code | 12d | 2021-04-16 | 2021-05-03 | 303 | 0d |  |
| 305 | 4.5.3.3 | · Module documentation and acceptance test | 12d | 2021-05-04 | 2021-05-19 | 301, 304 | 0d |  |
| 306 | 4.6 | **Develop Interface and Security for Supplier Web UI** | 80d | 2021-05-20 | 2021-09-08 |  | 0d |  |
| 307 | 4.6.1 | **DBMS: Update Orders and Invoicing Database – add quotations table** | 18d | 2021-05-20 | 2021-06-14 |  | 0d |  |
| 308 | 4.6.1.1 | · Design database | 8d | 2021-05-20 | 2021-05-31 | 305 | 0d |  |
| 309 | 4.6.1.2 | · Implement and test database structures | 10d | 2021-06-01 | 2021-06-14 | 308 | 2d |  |
| 310 | 4.6.2 | **Server App: Purchasing/Inventory** | 36d | 2021-06-01 | 2021-07-20 |  | 0d |  |
| 311 | 4.6.2.1 | · Software requirements analysis | 12d | 2021-06-01 | 2021-06-16 | 308 | 0d |  |
| 312 | 4.6.2.2 | · Software design& code | 12d | 2021-06-17 | 2021-07-02 | 309, 311 | 0d |  |
| 313 | 4.6.2.3 | · Module documentation and acceptance test | 12d | 2021-07-05 | 2021-07-20 | 312 | 0d |  |
| 314 | 4.6.3 | **Client App: Supplier Web UI** | 36d | 2021-07-21 | 2021-09-08 |  | 0d |  |
| 315 | 4.6.3.1 | · Software requirements analysis | 12d | 2021-07-21 | 2021-08-05 | 313 | 0d |  |
| 316 | 4.6.3.2 | · Software design& code | 12d | 2021-08-06 | 2021-08-23 | 315 | 0d |  |
| 317 | 4.6.3.3 | · Module documentation and acceptance test | 12d | 2021-08-24 | 2021-09-08 | 316 | 0d |  |

| ID | WBS | Task | Duration | Start | Finish | Predecessors | Total slack | Free slack |
| --- | --- | --- | --- | --- | --- | --- | --- | --- |
| 318 | 4.7 | **Develop Knowledge Management and Training subsystem** | 44d | 2021-09-09 | 2021-11-09 |  | 0d |  |
| 319 | 4.7.1 | **DBMS: Knowledgebase database** | 18d | 2021-09-09 | 2021-10-04 |  | 0d |  |
| 320 | 4.7.1.1 | · Design database | 8d | 2021-09-09 | 2021-09-20 | 317 | 0d |  |
| 321 | 4.7.1.2 | · Implement and test database structures | 10d | 2021-09-21 | 2021-10-04 | 320 | 20d | 8d |
| 322 | 4.7.2 | **Server App: Knowledgebase and Training Manual** | 27d | 2021-09-21 | 2021-10-27 |  | 0d |  |
| 323 | 4.7.2.1 | · Software requirements analysis | 9d | 2021-09-21 | 2021-10-01 | 320 | 0d |  |
| 324 | 4.7.2.2 | · Software design& code | 9d | 2021-10-04 | 2021-10-14 | 323 | 12d | 0d |
| 325 | 4.7.2.3 | · Module documentation and acceptance test | 9d | 2021-10-15 | 2021-10-27 | 321, 324 | 12d | 0d |
| 326 | 4.7.3 | **Client App: Training Manual and Knowledgebase application** | 36d | 2021-09-21 | 2021-11-09 |  | 12d |  |
| 327 | 4.7.3.1 | · Software requirements analysis | 9d | 2021-09-21 | 2021-10-01 | 320 | 21d | 0d |
| 328 | 4.7.3.2 | · Software design& code | 9d | 2021-10-04 | 2021-10-14 | 327 | 21d | 9d |
| 329 | 4.7.3.3 | · Module documentation and acceptance test | 9d | 2021-10-28 | 2021-11-09 | 325, 328 | 12d |  |
| 330 | 4.8 | **Review Currency Prediction and Conversion subsystem** | 41d | 2021-10-04 | 2021-11-29 |  | 0d |  |
| 331 | 4.8.1 | · Code and test software changes | 10d | 2021-10-04 | 2021-10-15 | 323 | 0d |  |
| 332 | 4.8.2 | · Integration and regression testing for each component | 10d | 2021-10-18 | 2021-10-29 | 331 | 0d |  |
| 333 | 4.8.3 | · Validate and test results | 10d | 2021-11-01 | 2021-11-12 | 332 | 0d |  |
| 334 | 4.8.4 | · UAT | 9d | 2021-11-15 | 2021-11-25 | 333 | 0d |  |
| 335 | 4.8.5 | · Sign-off | 2d | 2021-11-26 | 2021-11-29 | 329, 334 | 0d |  |
| 336 | 4.9 | **Upgrade Operations Management & Reporting subsystem** | 60d | 2021-11-30 | 2022-02-21 |  | 0d |  |
| 337 | 4.9.1 | **DBMS: Sales and Market Phase III functions** | 24d | 2021-11-30 | 2021-12-31 |  | 0d |  |
| 338 | 4.9.1.1 | · Design database | 12d | 2021-11-30 | 2021-12-15 | 333, 335 | 0d |  |
| 339 | 4.9.1.2 | · Implement and test database structures | 12d | 2021-12-16 | 2021-12-31 | 338 | 12d |  |
| 340 | 4.9.2 | **Server App: Upgraded Sales Analysis and Reporting for Phase III functions** | 36d | 2021-12-16 | 2022-02-03 |  | 0d |  |
| 341 | 4.9.2.1 | · Software requirements analysis | 12d | 2021-12-16 | 2021-12-31 | 338 | 0d |  |
| 342 | 4.9.2.2 | · Software design& code | 12d | 2022-01-03 | 2022-01-18 | 341 | 0d |  |
| 343 | 4.9.2.3 | · Module documentation and acceptance test | 12d | 2022-01-19 | 2022-02-03 | 339, 342 | 0d |  |

| ID | WBS | Task | Duration | Start | Finish | Predecessors | Total slack | Free slack |
| --- | --- | --- | --- | --- | --- | --- | --- | --- |
| 344 | 4.9.3 | **Client App: Management and Reporting for Phase II and III enhancements** | 36d | 2022-01-03 | 2022-02-21 |  | 0d |  |
| 345 | 4.9.3.1 | · Software requirements analysis | 12d | 2022-01-03 | 2022-01-18 | 341 | 0d |  |
| 346 | 4.9.3.2 | · Software design& code | 12d | 2022-01-19 | 2022-02-03 | 345 | 0d |  |
| 347 | 4.9.3.3 | · Module documentation and acceptance test | 12d | 2022-02-04 | 2022-02-21 | 343, 346 | 0d |  |
| 348 | 4.10 | **Upgrade System Management Subsystem (advanced functions)** | 72d | 2022-02-22 | 2022-06-01 |  | 0d |  |
| 349 | 4.10.1 | **DBMS: Logging & Audit Trail for Phase III functions.** | 24d | 2022-02-22 | 2022-03-25 |  | 0d |  |
| 350 | 4.10.1.1 | · Design database | 12d | 2022-02-22 | 2022-03-09 | 347 | 0d |  |
| 351 | 4.10.1.2 | · Implement and test database structures | 12d | 2022-03-10 | 2022-03-25 | 350 | 48d | 12d |
| 352 | 4.10.2 | **Server App: Upgraded system management and security application for Phase III functions** | 36d | 2022-03-10 | 2022-04-28 |  | 0d |  |
| 353 | 4.10.2.1 | · Software requirements analysis | 12d | 2022-03-10 | 2022-03-25 | 350 | 0d |  |
| 354 | 4.10.2.2 | · Software design & code | 12d | 2022-03-28 | 2022-04-12 | 353 | 36d | 0d |
| 355 | 4.10.2.3 | · Module documentation and acceptance test | 12d | 2022-04-13 | 2022-04-28 | 351, 354 | 36d | 0d |
| 356 | 4.10.3 | **Client App: user-navigation/access and reporting for Phase II Enhancements** | 36d | 2022-03-28 | 2022-05-16 |  | 0d |  |
| 357 | 4.10.3.1 | · Software requirements analysis | 12d | 2022-03-28 | 2022-04-12 | 353 | 0d |  |
| 358 | 4.10.3.2 | · Software design & code | 12d | 2022-04-13 | 2022-04-28 | 357 | 36d | 0d |
| 359 | 4.10.3.3 | · Module documentation and acceptance test | 12d | 2022-04-29 | 2022-05-16 | 355, 358 | 36d |  |
| 360 | 4.10.4 | **Web client: Provide advanced GUI to implement user menus & login form for UI client app. Phase III** | 36d | 2022-04-13 | 2022-06-01 |  | 0d |  |
| 361 | 4.10.4.1 | · User navigation requirements analysis | 12d | 2022-04-13 | 2022-04-28 | 357 | 0d |  |
| 362 | 4.10.4.2 | · UI design & scripting | 12d | 2022-04-29 | 2022-05-16 | 361 | 0d |  |
| 363 | 4.10.4.3 | · UI documentation and acceptance test | 12d | 2022-05-17 | 2022-06-01 | 362 | 0d |  |
| 364 | 4.11 | **Phase III Delivery Activities** | 172d | 2022-02-22 | 2022-10-19 |  | 0d |  |
| 365 | 4.11.1 | **Phase III Integration Test** | 30d | 2022-06-02 | 2022-07-13 |  | 0d |  |
| 366 | 4.11.1.1 | · Integration test of Phase III software components | 12d | 2022-06-02 | 2022-06-17 | 357, 363 | 0d |  |
| 367 | 4.11.1.2 | · Redesign and rework following integration tests | 12d | 2022-06-20 | 2022-07-05 | 366 | 0d |  |
| 368 | 4.11.1.3 | · Phase I & II software documentation and acceptance test | 6d | 2022-07-06 | 2022-07-13 | 359, 367 | 0d |  |

| ID | WBS | Task | Duration | Start | Finish | Predecessors | Total slack |
| --- | --- | --- | --- | --- | --- | --- | --- |
| 369 | 4.11.2 | **Phase III Change Management** | 8d | 2022-02-22 | 2022-03-03 |  | 94d |
| 370 | 4.11.2.1 | · Business process change | 2d | 2022-02-22 | 2022-02-23 | 347 | 100d |
| 371 | 4.11.2.2 | · Training on new work procedures | 8d | 2022-02-22 | 2022-03-03 | 347 | 94d |
| 372 | 4.11.2.3 | · Update standard operating procedures | 2d | 2022-02-22 | 2022-02-23 | 347 | 100d |
| 373 | 4.11.2.4 | · User training/train the trainer sessions | 8d | 2022-02-22 | 2022-03-03 | 347 | 94d |
| 374 | 4.11.2.5 | · Set up and train support team (first-level and second-level) | 8d | 2022-02-22 | 2022-03-03 | 347 | 94d |
| 375 | 4.11.3 | **Process and System Evaluation** | 30d | 2022-07-14 | 2022-08-24 |  | 0d |
| 376 | 4.11.3.1 | · Systems installation | 12d | 2022-07-14 | 2022-07-29 | 368, 370, 371, 372, 373, 374 | 0d |
| 377 | 4.11.3.2 | · Pilot test | 12d | 2022-08-01 | 2022-08-16 | 376 | 0d |
| 378 | 4.11.3.3 | · User evaluation/feedback | 6d | 2022-08-17 | 2022-08-24 | 377 | 0d |
| 379 | 4.11.4 | **Project Review (Stagegate)** | 36d | 2022-08-25 | 2022-10-13 |  | 0d |
| 380 | 4.11.4.1 | Stagegate review for the final system | 12d | 2022-08-25 | 2022-09-09 | 378 | 0d |
| 381 | 4.11.4.2 | Remediation of client issues | 12d | 2022-09-12 | 2022-09-27 | 380 | 0d |
| 382 | 4.11.4.3 | Client approval and signoff for final system | 12d | 2022-09-28 | 2022-10-13 | 381 | 0d |
| 383 | 4.11.5 | **Project Closure** | 58d | 2022-08-01 | 2022-10-19 |  | 0d |
| 384 | 4.11.5.1 | Procurement close | 8d | 2022-08-01 | 2022-08-10 | 376 | 46d |
| 385 | 4.11.5.2 | Obtain formal acceptance | 12d | 2022-09-28 | 2022-10-13 | 381 | 0d |
| 386 | 4.11.5.3 | Release resources | 4d | 2022-10-14 | 2022-10-19 | 382, 384, 385 | 0d |
